# K11321 "Подобряване на административното обслужване на потребителите чрез надграждане на централните системи на електронното пр

Schedule from MS Project, 2012-06-20 to 2014-11-21.
Сирма ИТТ

## Calendars

- Standard: Mon-Fri 08:00-12:00, 13:00-17:00; Sat-Sun off.

## Resources

| Resource | Rate |
| --- | --- |
| Ръководител на проекта | 30 |
| Старши програмист 2 | 30 |
| Програмист 2 | 30 |
| Тестер | 25 |
| Документор | 20 |
| Преподавател | 20 |
| Бизнес аналитик | 30 |
| Програмист 1 | 30 |
| Старши програмист 1 | 30 |

## Schedule

| ID | WBS | Task | Type | Duration | Start | Finish | Predecessors | Baseline start | Baseline finish | Baseline duration | Total slack | Free slack | Resources | Work | Cost |
| --- | --- | --- | --- | --- | --- | --- | --- | --- | --- | --- | --- | --- | --- | --- | --- |
| 1 | 1 | **ОП1 "Създаване на регистър за електронна идентичност на потребителите"** |  | 457d | 2012-06-20 | 2014-03-20 |  | 2003-09-29 | 2003-09-29 | 1d | 176d |  |  | 7365.33h | 2,000 |
| 2 | 1.1 | **Фаза Планиране** |  | 85d | 2012-06-20 | 2012-10-16 |  |  |  |  | 176d |  |  | 1669.33h | 2,000 |
| 3 | 1.1.1 | **I1 Планиране на системата** |  | 31d | 2012-06-20 | 2012-08-01 |  |  |  |  | 176d |  |  | 1528h | 2,000 |
| 4 | 1.1.1.1 | **Изграждане на механизми за управление** |  | 10d | 2012-06-20 | 2012-07-03 |  |  |  |  | 623d | 0d |  | 400h | 2,000 |
| 5 | 1.1.1.1.1 | Уточняване на организационната схема на проекта |  | 5d | 2012-06-20 | 2012-06-26 |  |  |  |  | 623d | 0d | Преподавател; Ръководител на проекта | 80h | 2,000 |
| 6 | 1.1.1.1.2 | Уточняване на процедурите за управление на проекта |  | 10d | 2012-06-20 | 2012-07-03 | 5SS |  |  |  | 623d |  |  | 80h |  |
| 7 | 1.1.1.1.3 | Подготовка на главен план |  | 10d | 2012-06-20 | 2012-07-03 | 5SS |  |  |  | 623d |  |  | 80h |  |
| 8 | 1.1.1.1.4 | Подготовка на план за управление на качеството |  | 10d | 2012-06-20 | 2012-07-03 | 5SS |  |  |  | 623d |  |  | 80h |  |
| 9 | 1.1.1.1.5 | Среща за стартиране на проекта (1 ден в посочения период) |  | 10d | 2012-06-20 | 2012-07-03 | 5SS |  |  |  | 623d |  |  | 80h |  |
| 10 | 1.1.1.2 | **Изграждане на проектната инфраструктура** |  | 20d | 2012-06-20 | 2012-07-17 | 4SS |  |  |  | 613d | 0d |  | 800h |  |
| 11 | 1.1.1.2.1 | Доуточняване на съществуващия инфраструктурен модел |  | 20d | 2012-06-20 | 2012-07-17 |  |  |  |  | 613d |  |  | 160h |  |
| 12 | 1.1.1.2.2 | Изграждане на инфраструктурa за проектиране |  | 20d | 2012-06-20 | 2012-07-17 |  |  |  |  | 613d |  |  | 160h |  |
| 13 | 1.1.1.2.3 | Изграждане на инфраструктурa за разработка |  | 20d | 2012-06-20 | 2012-07-17 |  |  |  |  | 613d |  |  | 160h |  |
| 14 | 1.1.1.2.4 | Изграждане на инфраструктурa за тестване |  | 20d | 2012-06-20 | 2012-07-17 |  |  |  |  | 613d |  |  | 160h |  |
| 15 | 1.1.1.2.5 | Изграждане на инфраструктурa за управление на проекта |  | 20d | 2012-06-20 | 2012-07-17 |  |  |  |  | 613d |  |  | 160h |  |
| 16 | 1.1.1.3 | Разширяване на функционалните изисквания |  | 30d | 2012-06-20 | 2012-07-31 | 10SS |  |  |  | 603d |  |  | 160h |  |
| 17 | 1.1.1.4 | Разширяване на нефункционалните изисквания |  | 30d | 2012-06-20 | 2012-07-31 | 10SS |  |  |  | 171d | 0d |  | 160h |  |
| 18 | 1.1.1.5 | Предаване на итерация | milestone | 1d | 2012-08-01 | 2012-08-01 | 17 |  |  |  | 176d | 0d |  | 8h |  |
| 19 | 1.1.2 | I1 Оценка и отразяване на корекции |  | 53d | 2012-08-02 | 2012-10-15 | 18 |  |  |  | 548d | 0d |  | 141.33h |  |
| 20 | 1.1.3 | I1 Приемане на итерация | milestone | 1d | 2012-10-16 | 2012-10-16 | 19 |  |  |  | 548d |  |  |  |  |
| 21 | 1.2 | **Фаза Проектиране** |  | 102d | 2012-08-02 | 2012-12-21 |  |  |  |  | 176d |  |  | 1920h |  |
| 22 | 1.2.1 | **E1 Разработване на Аналитичния и Дизайн модела** |  | 102d | 2012-08-02 | 2012-12-21 | 18 |  |  |  | 176d |  |  | 1840h |  |
| 23 | 1.2.1.1 | **Разработване на Бизнес модел на системата** |  | 20d | 2012-08-02 | 2012-08-29 |  |  |  |  | 176d | 0d |  | 280h |  |
| 24 | 1.2.1.1.1 | Уточняване на множеството бизнес процеси в системата |  | 10d | 2012-08-02 | 2012-08-15 |  |  |  |  | 186d |  |  | 80h |  |
| 25 | 1.2.1.1.2 | Доуточняване на модела на данните |  | 10d | 2012-08-02 | 2012-08-15 |  |  |  |  | 186d |  |  | 80h |  |
| 26 | 1.2.1.1.3 | Доуточняване на модела на услугите |  | 10d | 2012-08-02 | 2012-08-15 |  |  |  |  | 176d | 0d |  | 80h |  |
| 27 | 1.2.1.1.4 | Разработване на софтуерната архитектура |  | 10d | 2012-08-16 | 2012-08-29 | 26 |  |  |  | 176d |  |  | 40h |  |

| ID | WBS | Task | Type | Duration | Start | Finish | Predecessors | Total slack | Free slack | Work |
| --- | --- | --- | --- | --- | --- | --- | --- | --- | --- | --- |
| 28 | 1.2.1.2 | **Разработване на архитектурен прототип** |  | 15d | 2012-08-30 | 2012-09-19 | 23 | 176d | 0d | 360h |
| 29 | 1.2.1.2.1 | Детайлиране на архитектурния прототип |  | 15d | 2012-08-30 | 2012-09-19 |  | 176d |  | 120h |
| 30 | 1.2.1.2.2 | Изграждане на архитектурния прототип |  | 15d | 2012-08-30 | 2012-09-19 |  | 176d |  | 120h |
| 31 | 1.2.1.2.3 | Предаване на архитектурния прототип |  | 15d | 2012-08-30 | 2012-09-19 |  | 176d |  | 120h |
| 32 | 1.2.1.3 | **Разработване на Тестов модел на системата** |  | 67d | 2012-09-20 | 2012-12-21 | 28 | 176d |  | 1200h |
| 33 | 1.2.1.3.1 | Подготовка на процедури за тестване |  | 35d | 2012-09-20 | 2012-11-07 |  | 532d |  | 280h |
| 34 | 1.2.1.3.2 | Разработване на процедури за приемане |  | 35d | 2012-09-20 | 2012-11-07 |  | 532d |  | 280h |
| 35 | 1.2.1.3.3 | Разработване на тестов план |  | 35d | 2012-09-20 | 2012-11-07 |  | 532d |  | 280h |
| 36 | 1.2.1.3.4 | Разработване на тестов модел |  | 35d | 2012-09-20 | 2012-11-07 |  | 176d | 0d | 280h |
| 37 | 1.2.1.3.5 | Предаване на итерация | milestone | 1d | 2012-11-08 | 2012-11-08 | 36 | 500d | 0d |  |
| 38 | 1.2.1.3.6 | E1 Оценка и отразяване на корекции |  | 30d | 2012-11-09 | 2012-12-20 | 37 | 500d | 0d | 80h |
| 39 | 1.2.1.3.7 | E1 Приемане на итерация | milestone | 1d | 2012-12-21 | 2012-12-21 | 38 | 500d |  |  |
| 40 | 1.2.2 | **Е2 Разработване на модели** |  | 30d | 2012-11-08 | 2012-12-19 | 36 | 176d |  |  |
| 41 | 1.2.2.1 | Дизайн модел на бинес функционалности група 1 (БФГ1) |  | 30d | 2012-11-08 | 2012-12-19 |  | 502d |  |  |
| 42 | 1.2.2.2 | Дизайн модел на бинес функционалности група 2 (БФГ2) |  | 30d | 2012-11-08 | 2012-12-19 |  | 502d |  |  |
| 43 | 1.2.2.3 | Дизайн модел на бинес функционалности група 3 (БФГ3) |  | 30d | 2012-11-08 | 2012-12-19 |  | 502d |  |  |
| 44 | 1.2.2.4 | Предаване на итерация | milestone | 1d | 2012-11-08 | 2012-11-08 |  | 176d | 0d |  |
| 45 | 1.2.3 | E2 Оценка и отразяване на корекции |  | 30d | 2012-11-09 | 2012-12-20 | 44 | 176d | 0d | 80h |
| 46 | 1.2.4 | E2 Приемане на итерация | milestone | 1d | 2012-12-21 | 2012-12-21 | 45 | 176d | 0d |  |
| 47 | 1.3 | **Фаза Изграждане** |  | 98d | 2012-11-09 | 2013-03-26 |  | 207d |  | 1200h |
| 48 | 1.3.1 | **C1 Изграждане на БФГ1** |  | 40d | 2012-11-09 | 2013-01-03 | 44 | 433d |  | 280h |
| 49 | 1.3.1.1 | Разработване на модела на кода на БФГ1 |  | 40d | 2012-11-09 | 2013-01-03 |  | 491d |  |  |
| 50 | 1.3.1.2 | Провеждане на първични тестове на разработените модули от БФГ1 |  | 35d | 2012-11-09 | 2012-12-27 |  | 433d | 0d | 280h |
| 51 | 1.3.1.3 | Предаване на итерация | milestone | 1d | 2012-12-28 | 2012-12-28 | 50 | 433d | 0d |  |
| 52 | 1.3.2 | C1 Отразяване на корекции |  | 30d | 2012-12-31 | 2013-02-08 | 51 | 464d | 0d | 40h |
| 53 | 1.3.3 | C1 Приемане на итерация | milestone | 1d | 2013-02-11 | 2013-02-11 | 52 | 464d |  |  |

| ID | WBS | Task | Type | Duration | Start | Finish | Predecessors | Total slack | Free slack | Constraint | Work |
| --- | --- | --- | --- | --- | --- | --- | --- | --- | --- | --- | --- |
| 54 | 1.3.4 | **C2 Изграждане на БФГ2** |  | 50d | 2012-12-31 | 2013-03-08 | 51 | 433d |  |  | 400h |
| 55 | 1.3.4.1 | Разработване на модела на кода на БФГ2 |  | 50d | 2012-12-31 | 2013-03-08 |  | 445d |  |  |  |
| 56 | 1.3.4.2 | Провеждане на първични тестове на разработените модули от БФГ2 |  | 30d | 2012-12-31 | 2013-02-08 |  | 433d | 0d |  | 400h |
| 57 | 1.3.4.3 | Предаване на итерация | milestone | 1d | 2013-02-11 | 2013-02-11 | 56 | 433d | 0d |  |  |
| 58 | 1.3.5 | C2 Отразяване на корекции |  | 30d | 2013-02-12 | 2013-03-25 | 57 | 433d | 0d |  | 40h |
| 59 | 1.3.6 | C2 Приемане на итерация | milestone | 1d | 2013-03-26 | 2013-03-26 | 58 | 433d |  |  |  |
| 60 | 1.3.7 | **C3 Изграждане на БФГ3** |  | 26d | 2012-12-24 | 2013-01-28 | 46 | 176d | 0d |  | 400h |
| 61 | 1.3.7.1 | Разработване на модела на кода на БФГ3 |  | 25d | 2012-12-24 | 2013-01-25 |  | 177d |  |  |  |
| 62 | 1.3.7.2 | Провеждане на първични тестове на разработените модули от БФГ3 |  | 25d | 2012-12-24 | 2013-01-25 |  | 176d | 0d |  | 400h |
| 63 | 1.3.7.3 | Предаване на итерация | milestone | 1d | 2013-01-28 | 2013-01-28 | 62 | 176d | 0d |  |  |
| 64 | 1.3.8 | C3 Отразяване на корекции |  | 15d | 2013-01-29 | 2013-02-18 | 63 | 458d | 0d |  | 40h |
| 65 | 1.3.9 | C3 Приемане на итерация | milestone | 1d | 2013-02-19 | 2013-02-19 | 64 | 458d |  |  |  |
| 66 | 1.4 | **Фаза Внедряване** |  | 36d | 2013-01-29 | 2013-03-19 |  | 176d |  |  | 480h |
| 67 | 1.4.1 | **Т1 Предаване на модули с БФГ1** |  | 21d | 2013-01-29 | 2013-02-26 | 60 | 176d |  |  | 440h |
| 68 | 1.4.1.1 | Мигриране на данни |  | 5d | 2013-01-29 | 2013-02-04 |  | 469d |  |  | 40h |
| 69 | 1.4.1.2 | Функционални и интегрални тестове |  | 5d | 2013-01-29 | 2013-02-04 |  | 469d |  |  | 40h |
| 70 | 1.4.1.3 | Провеждане на тестове по приемане на функционалността |  | 10d | 2013-01-29 | 2013-02-11 |  | 464d |  |  | 80h |
| 71 | 1.4.1.4 | Провеждане на курсове за обучение на обучители на потребители |  | 15d | 2013-01-29 | 2013-02-18 |  | 459d |  |  | 120h |
| 72 | 1.4.1.5 | Провеждане на курсове за обучение на системни администратори |  | 15d | 2013-01-29 | 2013-02-18 |  | 176d | 0d |  | 120h |
| 73 | 1.4.1.6 | Пускане в експлоатация |  | 5d | 2013-02-19 | 2013-02-25 | 72 | 176d | 0d |  | 40h |
| 74 | 1.4.1.7 | Предаване на итерация | milestone | 1d | 2013-02-26 | 2013-02-26 | 73 | 453d |  |  |  |
| 75 | 1.4.2 | Т1 Отразяване на корекции |  | 15d | 2013-02-26 | 2013-03-18 | 73 | 176d | 0d |  | 40h |
| 76 | 1.4.3 | Т1 Приемане на итерация | milestone | 1d | 2013-03-19 | 2013-03-19 | 75 | 176d | 0d |  |  |
| 77 | 1.5 | **Гаранционен период** |  | 262d | 2013-03-20 | 2014-03-20 | 76 | 176d |  |  | 2096h |
| 78 | 1.5.1 | Гаранционна поддръжка |  | 261d | 2013-03-20 | 2014-03-19 |  | 176d | 0d |  | 2088h |
| 79 | 1.5.2 | Приключване на гаранционна поддръжка |  | 1d | 2014-03-20 | 2014-03-20 | 78 | 176d |  | start no earlier than 2009-11-23 | 8h |

| ID | WBS | Task | Type | Duration | Start | Finish | Predecessors | Baseline start | Baseline finish | Baseline duration | Total slack | Free slack | Work |
| --- | --- | --- | --- | --- | --- | --- | --- | --- | --- | --- | --- | --- | --- |
| 80 | 2 | **ОП2 "Надграждане на единната среда за обмен на електронни документи и внедряване на централна документооборотна система"** |  | 458d | 2012-06-20 | 2014-03-21 |  | 2003-09-29 | 2003-09-29 | 1d | 175d |  | 7224h |
| 81 | 2.1 | **Фаза Планиране** |  | 62d | 2012-06-20 | 2012-09-13 |  |  |  |  | 175d |  | 1608h |
| 82 | 2.1.1 | **I1 Планиране на системата** |  | 31d | 2012-06-20 | 2012-08-01 |  |  |  |  | 175d |  | 1528h |
| 83 | 2.1.1.1 | **Изграждане на механизми за управление** |  | 10d | 2012-06-20 | 2012-07-03 |  |  |  |  | 623d | 0d | 400h |
| 84 | 2.1.1.1.1 | Уточняване на организационната схема на проекта |  | 10d | 2012-06-20 | 2012-07-03 |  |  |  |  | 623d | 0d | 80h |
| 85 | 2.1.1.1.2 | Уточняване на процедурите за управление на проекта |  | 10d | 2012-06-20 | 2012-07-03 | 84SS |  |  |  | 623d |  | 80h |
| 86 | 2.1.1.1.3 | Подготовка на главен план |  | 10d | 2012-06-20 | 2012-07-03 | 84SS |  |  |  | 623d |  | 80h |
| 87 | 2.1.1.1.4 | Подготовка на план за управление на качеството |  | 10d | 2012-06-20 | 2012-07-03 | 84SS |  |  |  | 623d |  | 80h |
| 88 | 2.1.1.1.5 | Среща за стартиране на проекта (1 ден в посочения период) |  | 10d | 2012-06-20 | 2012-07-03 | 84SS |  |  |  | 623d |  | 80h |
| 89 | 2.1.1.2 | **Изграждане на проектната инфраструктура** |  | 20d | 2012-06-20 | 2012-07-17 | 83SS |  |  |  | 613d | 0d | 800h |
| 90 | 2.1.1.2.1 | Доуточняване на съществуващия инфраструктурен модел |  | 20d | 2012-06-20 | 2012-07-17 |  |  |  |  | 613d |  | 160h |
| 91 | 2.1.1.2.2 | Изграждане на инфраструктурa за проектиране |  | 20d | 2012-06-20 | 2012-07-17 |  |  |  |  | 613d |  | 160h |
| 92 | 2.1.1.2.3 | Изграждане на инфраструктурa за разработка |  | 20d | 2012-06-20 | 2012-07-17 |  |  |  |  | 613d |  | 160h |
| 93 | 2.1.1.2.4 | Изграждане на инфраструктурa за тестване |  | 20d | 2012-06-20 | 2012-07-17 |  |  |  |  | 613d |  | 160h |
| 94 | 2.1.1.2.5 | Изграждане на инфраструктурa за управление на проекта |  | 20d | 2012-06-20 | 2012-07-17 |  |  |  |  | 613d |  | 160h |
| 95 | 2.1.1.3 | Разширяване на функционалните изисквания |  | 30d | 2012-06-20 | 2012-07-31 | 89SS |  |  |  | 603d |  | 160h |
| 96 | 2.1.1.4 | Разширяване на нефункционалните изисквания |  | 30d | 2012-06-20 | 2012-07-31 | 89SS |  |  |  | 151d | 0d | 160h |
| 97 | 2.1.1.5 | Предаване на итерация |  | 1d | 2012-08-01 | 2012-08-01 | 96 |  |  |  | 151d | 0d | 8h |
| 98 | 2.1.2 | I1 Оценка и отразяване на корекции |  | 30d | 2012-08-02 | 2012-09-12 | 97 |  |  |  | 571d | 0d | 80h |
| 99 | 2.1.3 | I1 Приемане на итерация | milestone | 1d | 2012-09-13 | 2012-09-13 | 98 |  |  |  | 571d |  |  |
| 100 | 2.2 | **Фаза Проектиране** |  | 45d | 2012-08-02 | 2012-10-03 |  |  |  |  | 175d |  | 1840h |
| 101 | 2.2.1 | **E1 Разработване на Аналитичния и Дизайн модела** |  | 45d | 2012-08-02 | 2012-10-03 | 97 |  |  |  | 175d |  | 1760h |
| 102 | 2.2.1.1 | **Разработване на Бизнес модел на системата** |  | 20d | 2012-08-02 | 2012-08-29 |  |  |  |  | 567d | 0d | 280h |
| 103 | 2.2.1.1.1 | Уточняване на множеството бизнес процеси в системата |  | 10d | 2012-08-02 | 2012-08-15 |  |  |  |  | 577d |  | 80h |
| 104 | 2.2.1.1.2 | Доуточняване на модела на данните |  | 10d | 2012-08-02 | 2012-08-15 |  |  |  |  | 577d |  | 80h |
| 105 | 2.2.1.1.3 | Доуточняване на модела на услугите |  | 10d | 2012-08-02 | 2012-08-15 |  |  |  |  | 567d | 0d | 80h |
| 106 | 2.2.1.1.4 | Разработване на софтуерната архитектура |  | 10d | 2012-08-16 | 2012-08-29 | 105 |  |  |  | 567d |  | 40h |

| ID | WBS | Task | Type | Duration | Start | Finish | Predecessors | Total slack | Free slack | Work |
| --- | --- | --- | --- | --- | --- | --- | --- | --- | --- | --- |
| 107 | 2.2.1.2 | **Разработване на архитектурен прототип** |  | 15d | 2012-08-30 | 2012-09-19 | 102 | 567d |  | 360h |
| 108 | 2.2.1.2.1 | Детайлиране на архитектурния прототип |  | 15d | 2012-08-30 | 2012-09-19 |  | 567d |  | 120h |
| 109 | 2.2.1.2.2 | Изграждане на архитектурния прототип |  | 15d | 2012-08-30 | 2012-09-19 |  | 567d |  | 120h |
| 110 | 2.2.1.2.3 | Предаване на архитектурния прототип |  | 15d | 2012-08-30 | 2012-09-19 |  | 567d |  | 120h |
| 111 | 2.2.1.3 | **Разработване на Тестов модел на системата** |  | 35d | 2012-08-02 | 2012-09-19 |  | 567d |  | 1120h |
| 112 | 2.2.1.3.1 | Подготовка на процедури за тестване |  | 35d | 2012-08-02 | 2012-09-19 |  | 567d |  | 280h |
| 113 | 2.2.1.3.2 | Разработване на процедури за приемане |  | 35d | 2012-08-02 | 2012-09-19 |  | 567d |  | 280h |
| 114 | 2.2.1.3.3 | Разработване на тестов план |  | 35d | 2012-08-02 | 2012-09-19 |  | 567d |  | 280h |
| 115 | 2.2.1.3.4 | Разработване на тестов модел |  | 35d | 2012-08-02 | 2012-09-19 |  | 567d |  | 280h |
| 116 | 2.2.1.4 | Дизайн модел на бинес функционалности група 1 (БФГ1) |  | 45d | 2012-08-02 | 2012-10-03 |  | 557d |  |  |
| 117 | 2.2.1.5 | Дизайн модел на бинес функционалности група 2 (БФГ2) |  | 45d | 2012-08-02 | 2012-10-03 |  | 557d |  |  |
| 118 | 2.2.1.6 | Дизайн модел на бинес функционалности група 3 (БФГ3) |  | 45d | 2012-08-02 | 2012-10-03 |  | 557d |  |  |
| 119 | 2.2.1.7 | Предаване на итерация | milestone | 1d | 2012-08-02 | 2012-08-02 |  | 151d | 0d |  |
| 120 | 2.2.2 | E1 Оценка и отразяване на корекции |  | 30d | 2012-08-03 | 2012-09-13 | 119 | 570d | 0d | 80h |
| 121 | 2.2.3 | E1 Приемане на итерация | milestone | 1d | 2012-09-14 | 2012-09-14 | 120 | 570d |  |  |
| 122 | 2.3 | **Фаза Изграждане** |  | 149d | 2012-08-03 | 2013-02-27 |  | 175d |  | 1200h |
| 123 | 2.3.1 | **C1 Изграждане на БФГ1** |  | 60d | 2012-08-03 | 2012-10-25 | 119 | 175d |  | 280h |
| 124 | 2.3.1.1 | Разработване на модела на кода на БФГ1 |  | 60d | 2012-08-03 | 2012-10-25 |  | 541d |  |  |
| 125 | 2.3.1.2 | Провеждане на първични тестове на разработените модули от БФГ1 |  | 35d | 2012-08-03 | 2012-09-20 |  | 151d | 0d | 280h |
| 126 | 2.3.1.3 | Предаване на итерация | milestone | 1d | 2012-09-21 | 2012-09-21 | 125 | 151d | 0d |  |
| 127 | 2.3.2 | C1 Отразяване на корекции |  | 20d | 2012-09-24 | 2012-10-19 | 126 | 544d | 0d | 40h |
| 128 | 2.3.3 | C1 Приемане на итерация | milestone | 1d | 2012-10-22 | 2012-10-22 | 127 | 544d |  |  |
| 129 | 2.3.4 | **C2 Изграждане на БФГ2** |  | 60d | 2012-09-24 | 2012-12-14 | 126 | 175d |  | 400h |
| 130 | 2.3.4.1 | Разработване на модела на кода на БФГ2 |  | 60d | 2012-09-24 | 2012-12-14 |  | 505d |  |  |
| 131 | 2.3.4.2 | Провеждане на първични тестове на разработените модули от БФГ2 |  | 50d | 2012-09-24 | 2012-11-30 |  | 151d | 0d | 400h |
| 132 | 2.3.4.3 | Предаване на итерация | milestone | 1d | 2012-12-03 | 2012-12-03 | 131 | 151d | 0d |  |
| 133 | 2.3.5 | C2 Отразяване на корекции |  | 20d | 2012-12-04 | 2012-12-31 | 132 | 493d | 0d | 40h |
| 134 | 2.3.6 | C2 Приемане на итерация | milestone | 1d | 2013-01-01 | 2013-01-01 | 133 | 493d |  |  |

| ID | WBS | Task | Type | Duration | Start | Finish | Predecessors | Baseline start | Baseline finish | Baseline duration | Total slack | Free slack | Constraint | Work |
| --- | --- | --- | --- | --- | --- | --- | --- | --- | --- | --- | --- | --- | --- | --- |
| 135 | 2.3.7 | **C3 Изграждане на БФГ3** |  | 41d | 2012-12-04 | 2013-01-29 | 132 |  |  |  | 175d | 0d |  | 400h |
| 136 | 2.3.7.1 | Разработване на модела на кода на БФГ3 |  | 40d | 2012-12-04 | 2013-01-28 |  |  |  |  | 176d |  |  |  |
| 137 | 2.3.7.2 | Провеждане на първични тестове на разработените модули от БФГ3 |  | 40d | 2012-12-04 | 2013-01-28 |  |  |  |  | 175d | 0d |  | 400h |
| 138 | 2.3.7.3 | Предаване на итерация | milestone | 1d | 2013-01-29 | 2013-01-29 | 137 |  |  |  | 175d | 0d |  |  |
| 139 | 2.3.8 | C3 Отразяване на корекции |  | 20d | 2013-01-30 | 2013-02-26 | 138 |  |  |  | 452d | 0d |  | 40h |
| 140 | 2.3.9 | C3 Приемане на итерация | milestone | 1d | 2013-02-27 | 2013-02-27 | 139 |  |  |  | 452d |  |  |  |
| 141 | 2.4 | **Фаза Внедряване** |  | 36d | 2013-01-30 | 2013-03-20 |  |  |  |  | 175d |  |  | 480h |
| 142 | 2.4.1 | **Т1 Предаване на модули с БФГ1** |  | 21d | 2013-01-30 | 2013-02-27 | 135 |  |  |  | 175d |  |  | 440h |
| 143 | 2.4.1.1 | Мигриране на данни |  | 5d | 2013-01-30 | 2013-02-05 |  |  |  |  | 468d |  |  | 40h |
| 144 | 2.4.1.2 | Функционални и интегрални тестове |  | 5d | 2013-01-30 | 2013-02-05 |  |  |  |  | 468d |  |  | 40h |
| 145 | 2.4.1.3 | Провеждане на тестове по приемане на функционалността |  | 10d | 2013-01-30 | 2013-02-12 |  |  |  |  | 463d |  |  | 80h |
| 146 | 2.4.1.4 | Провеждане на курсове за обучение на обучители на потребители |  | 15d | 2013-01-30 | 2013-02-19 |  |  |  |  | 458d |  |  | 120h |
| 147 | 2.4.1.5 | Провеждане на курсове за обучение на системни администратори |  | 15d | 2013-01-30 | 2013-02-19 |  |  |  |  | 175d | 0d |  | 120h |
| 148 | 2.4.1.6 | Пускане в експлоатация |  | 5d | 2013-02-20 | 2013-02-26 | 147 |  |  |  | 175d | 0d |  | 40h |
| 149 | 2.4.1.7 | Предаване на итерация | milestone | 1d | 2013-02-27 | 2013-02-27 | 148 |  |  |  | 452d |  |  |  |
| 150 | 2.4.2 | Т1 Отразяване на корекции |  | 15d | 2013-02-27 | 2013-03-19 | 148 |  |  |  | 175d | 0d |  | 40h |
| 151 | 2.4.3 | Т1 Приемане на итерация | milestone | 1d | 2013-03-20 | 2013-03-20 | 150 |  |  |  | 175d | 0d |  |  |
| 152 | 2.5 | **Гаранционен период** |  | 262d | 2013-03-21 | 2014-03-21 | 151 |  |  |  | 175d |  |  | 2096h |
| 153 | 2.5.1 | Гаранционна поддръжка |  | 261d | 2013-03-21 | 2014-03-20 |  |  |  |  | 175d | 0d |  | 2088h |
| 154 | 2.5.2 | Приключване на гаранционна поддръжка |  | 1d | 2014-03-21 | 2014-03-21 | 153 |  |  |  | 175d |  | start no earlier than 2009-11-23 | 8h |
| 155 | 3 | **ОП3 "Изграждане на централизирана система за мониторинг и управление на информационната сигурност и оперативна съвместимост. Надграждане на националния портал на електронното управление с функциите на ЕЗК"** |  | 633d | 2012-06-20 | 2014-11-21 |  | 2003-09-29 | 2003-09-29 | 1d | 0d |  |  | 7224h |
| 156 | 3.1 | **Доставка на оборудване** |  | 633d | 2012-06-20 | 2014-11-21 |  |  |  |  | 0d |  |  |  |
| 157 | 3.1.1 | Доставка на оборудване |  | 75d | 2012-06-20 | 2012-10-02 |  |  |  |  | 0d |  |  |  |
| 158 | 3.1.2 | Инсталиране и тестване |  | 25d | 2012-10-03 | 2012-11-06 | 157 |  |  |  | 0d |  |  |  |
| 159 | 3.1.3 | Провеждане на обучение |  | 10d | 2012-11-07 | 2012-11-20 | 158 |  |  |  | 0d |  |  |  |
| 160 | 3.1.4 | Приемане на доставката |  | 1d | 2012-11-21 | 2012-11-21 | 159 |  |  |  | 0d |  |  |  |
| 161 | 3.1.5 | Гаранционен период |  | 522d | 2012-11-22 | 2014-11-21 | 160 |  |  |  | 0d |  |  |  |

| ID | WBS | Task | Type | Duration | Start | Finish | Predecessors | Total slack | Free slack | Work |
| --- | --- | --- | --- | --- | --- | --- | --- | --- | --- | --- |
| 162 | 3.2 | **Проектиране КПУ** |  | 141d | 2012-06-20 | 2013-01-02 |  | 492d |  |  |
| 163 | 3.2.1 | План за подготовка и провеждане на учението |  | 60d | 2012-06-20 | 2012-09-11 | 176SS | 558d | 0d |  |
| 164 | 3.2.2 | План за контрол на учението |  | 75d | 2012-06-20 | 2012-10-02 | 163SS | 558d |  |  |
| 165 | 3.2.3 | Набор от примерни сценарии за проиграване по време на учението |  | 75d | 2012-06-20 | 2012-10-02 | 163SS | 558d | 0d |  |
| 166 | 3.2.4 | Документирани процедури за реагиране при настъпване на инцидент в информационната сигурност |  | 50d | 2012-08-02 | 2012-10-10 | 195SS | 492d | 0d |  |
| 167 | 3.2.5 | Техническа и системна архитектура |  | 50d | 2012-08-02 | 2012-10-10 | 166SS | 492d | 0d |  |
| 168 | 3.2.6 | Главен списък със събития / Главен списък с инциденти (MEL/MIL) |  | 75d | 2012-06-20 | 2012-10-02 | 165SS | 558d |  |  |
| 169 | 3.2.7 | Методология за анализ, оценка и извличане на поуки |  | 45d | 2012-10-11 | 2012-12-12 | 167 | 507d |  |  |
| 170 | 3.2.8 | Уеб сайт на учението |  | 45d | 2012-10-11 | 2012-12-12 | 167 | 507d |  |  |
| 171 | 3.2.9 | Концепция за обща оперативна картина |  | 45d | 2012-08-02 | 2012-10-03 | 195SS | 557d |  |  |
| 172 | 3.2.10 | Въпросници за участниците за определяне на ролята в учението |  | 60d | 2012-06-20 | 2012-09-11 | 176SS | 573d |  |  |
| 173 | 3.2.11 | Спецификация за софтуерен продукт за провеждане на КПУ |  | 60d | 2012-10-11 | 2013-01-02 | 167 | 492d |  |  |
| 174 | 3.3 | **Разработка на софтуер** |  | 458d | 2012-06-20 | 2014-03-21 |  | 175d |  | 7224h |
| 175 | 3.3.1 | **Фаза Планиране** |  | 47d | 2012-06-20 | 2012-08-23 |  | 175d |  | 1608h |
| 176 | 3.3.1.1 | **I1 Планиране на системата** |  | 31d | 2012-06-20 | 2012-08-01 |  | 175d | 0d | 1528h |
| 177 | 3.3.1.1.1 | **Изграждане на механизми за управление** |  | 10d | 2012-06-20 | 2012-07-03 |  | 623d | 0d | 400h |
| 178 | 3.3.1.1.1.1 | Уточняване на организационната схема на проекта |  | 10d | 2012-06-20 | 2012-07-03 |  | 623d | 0d | 80h |
| 179 | 3.3.1.1.1.2 | Уточняване на процедурите за управление на проекта |  | 10d | 2012-06-20 | 2012-07-03 | 178SS | 623d |  | 80h |
| 180 | 3.3.1.1.1.3 | Подготовка на главен план |  | 10d | 2012-06-20 | 2012-07-03 | 178SS | 623d |  | 80h |
| 181 | 3.3.1.1.1.4 | Подготовка на план за управление на качеството |  | 10d | 2012-06-20 | 2012-07-03 | 178SS | 623d |  | 80h |
| 182 | 3.3.1.1.1.5 | Среща за стартиране на проекта (1 ден в посочения период) |  | 10d | 2012-06-20 | 2012-07-03 | 178SS | 623d |  | 80h |
| 183 | 3.3.1.1.2 | **Изграждане на проектната инфраструктура** |  | 20d | 2012-06-20 | 2012-07-17 | 177SS | 613d | 0d | 800h |
| 184 | 3.3.1.1.2.1 | Доуточняване на съществуващия инфраструктурен модел |  | 20d | 2012-06-20 | 2012-07-17 |  | 613d |  | 160h |
| 185 | 3.3.1.1.2.2 | Изграждане на инфраструктурa за проектиране |  | 20d | 2012-06-20 | 2012-07-17 |  | 613d |  | 160h |
| 186 | 3.3.1.1.2.3 | Изграждане на инфраструктурa за разработка |  | 20d | 2012-06-20 | 2012-07-17 |  | 613d |  | 160h |
| 187 | 3.3.1.1.2.4 | Изграждане на инфраструктурa за тестване |  | 20d | 2012-06-20 | 2012-07-17 |  | 613d |  | 160h |
| 188 | 3.3.1.1.2.5 | Изграждане на инфраструктурa за управление на проекта |  | 20d | 2012-06-20 | 2012-07-17 |  | 613d |  | 160h |
| 189 | 3.3.1.1.3 | Разширяване на функционалните изисквания |  | 30d | 2012-06-20 | 2012-07-31 | 183SS | 603d |  | 160h |
| 190 | 3.3.1.1.4 | Разширяване на нефункционалните изисквания |  | 30d | 2012-06-20 | 2012-07-31 | 183SS | 175d | 0d | 160h |
| 191 | 3.3.1.1.5 | Предаване на итерация |  | 1d | 2012-08-01 | 2012-08-01 | 190 | 175d | 0d | 8h |
| 192 | 3.3.1.2 | I1 Оценка и отразяване на корекции |  | 15d | 2012-08-02 | 2012-08-22 | 191 | 586d | 0d | 80h |
| 193 | 3.3.1.3 | I1 Приемане на итерация | milestone | 1d | 2012-08-23 | 2012-08-23 | 192 | 586d |  |  |

| ID | WBS | Task | Type | Duration | Start | Finish | Predecessors | Total slack | Free slack | Work |
| --- | --- | --- | --- | --- | --- | --- | --- | --- | --- | --- |
| 194 | 3.3.2 | **Фаза Планиране** |  | 45d | 2012-08-02 | 2012-10-03 |  | 175d |  | 1840h |
| 195 | 3.3.2.1 | **E1 Разработване на Аналитичния и Дизайн модела** |  | 45d | 2012-08-02 | 2012-10-03 | 191 | 175d | 0d | 1760h |
| 196 | 3.3.2.1.1 | **Разработване на Бизнес модел на системата** |  | 20d | 2012-08-02 | 2012-08-29 |  | 567d | 0d | 280h |
| 197 | 3.3.2.1.1.1 | Уточняване на множеството бизнес процеси в системата |  | 10d | 2012-08-02 | 2012-08-15 |  | 577d |  | 80h |
| 198 | 3.3.2.1.1.2 | Доуточняване на модела на данните |  | 10d | 2012-08-02 | 2012-08-15 |  | 577d |  | 80h |
| 199 | 3.3.2.1.1.3 | Доуточняване на модела на услугите |  | 10d | 2012-08-02 | 2012-08-15 |  | 567d | 0d | 80h |
| 200 | 3.3.2.1.1.4 | Разработване на софтуерната архитектура |  | 10d | 2012-08-16 | 2012-08-29 | 199 | 567d |  | 40h |
| 201 | 3.3.2.1.2 | **Разработване на архитектурен прототип** |  | 15d | 2012-08-30 | 2012-09-19 | 196 | 567d |  | 360h |
| 202 | 3.3.2.1.2.1 | Детайлиране на архитектурния прототип |  | 15d | 2012-08-30 | 2012-09-19 |  | 567d |  | 120h |
| 203 | 3.3.2.1.2.2 | Изграждане на архитектурния прототип |  | 15d | 2012-08-30 | 2012-09-19 |  | 567d |  | 120h |
| 204 | 3.3.2.1.2.3 | Предаване на архитектурния прототип |  | 15d | 2012-08-30 | 2012-09-19 |  | 567d |  | 120h |
| 205 | 3.3.2.1.3 | **Разработване на Тестов модел на системата** |  | 35d | 2012-08-02 | 2012-09-19 |  | 567d |  | 1120h |
| 206 | 3.3.2.1.3.1 | Подготовка на процедури за тестване |  | 35d | 2012-08-02 | 2012-09-19 |  | 567d |  | 280h |
| 207 | 3.3.2.1.3.2 | Разработване на процедури за приемане |  | 35d | 2012-08-02 | 2012-09-19 |  | 567d |  | 280h |
| 208 | 3.3.2.1.3.3 | Разработване на тестов план |  | 35d | 2012-08-02 | 2012-09-19 |  | 567d |  | 280h |
| 209 | 3.3.2.1.3.4 | Разработване на тестов модел |  | 35d | 2012-08-02 | 2012-09-19 |  | 567d |  | 280h |
| 210 | 3.3.2.1.4 | Дизайн модел на бинес функционалности група 1 (БФГ1) |  | 45d | 2012-08-02 | 2012-10-03 |  | 557d |  |  |
| 211 | 3.3.2.1.5 | Дизайн модел на бинес функционалности група 2 (БФГ2) |  | 45d | 2012-08-02 | 2012-10-03 |  | 557d |  |  |
| 212 | 3.3.2.1.6 | Дизайн модел на бинес функционалности група 3 (БФГ3) |  | 45d | 2012-08-02 | 2012-10-03 |  | 557d |  |  |
| 213 | 3.3.2.1.7 | Предаване на итерация | milestone | 1d | 2012-08-02 | 2012-08-02 |  | 175d | 0d |  |
| 214 | 3.3.2.2 | E1 Оценка и отразяване на корекции |  | 15d | 2012-08-03 | 2012-08-23 | 213 | 585d | 0d | 80h |
| 215 | 3.3.2.3 | E1 Приемане на итерация | milestone | 1d | 2012-08-24 | 2012-08-24 | 214 | 585d |  |  |
| 216 | 3.3.3 | **Фаза Изграждане** |  | 144d | 2012-08-03 | 2013-02-20 |  | 175d |  | 1200h |
| 217 | 3.3.3.1 | **C1 Изграждане на БФГ1** |  | 60d | 2012-08-03 | 2012-10-25 | 213 | 175d |  | 280h |
| 218 | 3.3.3.1.1 | Разработване на модела на кода на БФГ1 |  | 60d | 2012-08-03 | 2012-10-25 |  | 541d |  |  |
| 219 | 3.3.3.1.2 | Провеждане на първични тестове на разработените модули от БФГ1 |  | 35d | 2012-08-03 | 2012-09-20 |  | 175d | 0d | 280h |
| 220 | 3.3.3.1.3 | Предаване на итерация | milestone | 1d | 2012-09-21 | 2012-09-21 | 219 | 175d | 0d |  |
| 221 | 3.3.3.2 | C1 Отразяване на корекции |  | 15d | 2012-09-24 | 2012-10-12 | 220 | 549d | 0d | 40h |
| 222 | 3.3.3.3 | C1 Приемане на итерация | milestone | 1d | 2012-10-15 | 2012-10-15 | 221 | 549d |  |  |

| ID | WBS | Task | Type | Duration | Start | Finish | Predecessors | Total slack | Free slack | Constraint | Work |
| --- | --- | --- | --- | --- | --- | --- | --- | --- | --- | --- | --- |
| 223 | 3.3.3.4 | **C2 Изграждане на БФГ2** |  | 51d | 2012-09-24 | 2012-12-03 | 220 | 175d |  |  | 400h |
| 224 | 3.3.3.4.1 | Разработване на модела на кода на БФГ2 |  | 50d | 2012-09-24 | 2012-11-30 |  | 515d |  |  |  |
| 225 | 3.3.3.4.2 | Провеждане на първични тестове на разработените модули от БФГ2 |  | 50d | 2012-09-24 | 2012-11-30 |  | 175d | 0d |  | 400h |
| 226 | 3.3.3.4.3 | Предаване на итерация | milestone | 1d | 2012-12-03 | 2012-12-03 | 225 | 175d | 0d |  |  |
| 227 | 3.3.3.5 | C2 Отразяване на корекции |  | 15d | 2012-12-04 | 2012-12-24 | 226 | 498d | 0d |  | 40h |
| 228 | 3.3.3.6 | C2 Приемане на итерация | milestone | 1d | 2012-12-25 | 2012-12-25 | 227 | 498d |  |  |  |
| 229 | 3.3.3.7 | **C3 Изграждане на БФГ3** |  | 41d | 2012-12-04 | 2013-01-29 | 226 | 175d | 0d |  | 400h |
| 230 | 3.3.3.7.1 | Разработване на модела на кода на БФГ3 |  | 40d | 2012-12-04 | 2013-01-28 |  | 176d |  |  |  |
| 231 | 3.3.3.7.2 | Провеждане на първични тестове на разработените модули от БФГ3 |  | 40d | 2012-12-04 | 2013-01-28 |  | 175d | 0d |  | 400h |
| 232 | 3.3.3.7.3 | Предаване на итерация | milestone | 1d | 2013-01-29 | 2013-01-29 | 231 | 175d | 0d |  |  |
| 233 | 3.3.3.8 | C3 Отразяване на корекции |  | 15d | 2013-01-30 | 2013-02-19 | 232 | 457d | 0d |  | 40h |
| 234 | 3.3.3.9 | C3 Приемане на итерация | milestone | 1d | 2013-02-20 | 2013-02-20 | 233 | 457d |  |  |  |
| 235 | 3.3.4 | **Фаза Внедряване** |  | 36d | 2013-01-30 | 2013-03-20 |  | 175d |  |  | 480h |
| 236 | 3.3.4.1 | **Т1 Предаване** |  | 21d | 2013-01-30 | 2013-02-27 | 229 | 175d |  |  | 440h |
| 237 | 3.3.4.1.1 | Мигриране на данни |  | 5d | 2013-01-30 | 2013-02-05 |  | 468d |  |  | 40h |
| 238 | 3.3.4.1.2 | Функционални и интегрални тестове |  | 5d | 2013-01-30 | 2013-02-05 |  | 468d |  |  | 40h |
| 239 | 3.3.4.1.3 | Провеждане на тестове по приемане на функционалността |  | 10d | 2013-01-30 | 2013-02-12 |  | 463d |  |  | 80h |
| 240 | 3.3.4.1.4 | Провеждане на курсове за обучение на обучители на потребители |  | 15d | 2013-01-30 | 2013-02-19 |  | 458d |  |  | 120h |
| 241 | 3.3.4.1.5 | Провеждане на курсове за обучение на системни администратори |  | 15d | 2013-01-30 | 2013-02-19 |  | 175d | 0d |  | 120h |
| 242 | 3.3.4.1.6 | Пускане в експлоатация |  | 5d | 2013-02-20 | 2013-02-26 | 241 | 175d | 0d |  | 40h |
| 243 | 3.3.4.1.7 | Предаване на итерация | milestone | 1d | 2013-02-27 | 2013-02-27 | 242 | 452d |  |  |  |
| 244 | 3.3.4.2 | Т1 Отразяване на корекции |  | 15d | 2013-02-27 | 2013-03-19 | 242 | 175d | 0d |  | 40h |
| 245 | 3.3.4.3 | Т1 Приемане на итерация | milestone | 1d | 2013-03-20 | 2013-03-20 | 244 | 175d | 0d |  |  |
| 246 | 3.3.5 | **Гаранционен период** |  | 262d | 2013-03-21 | 2014-03-21 | 245 | 175d |  |  | 2096h |
| 247 | 3.3.5.1 | Гаранционна поддръжка |  | 261d | 2013-03-21 | 2014-03-20 |  | 175d | 0d |  | 2088h |
| 248 | 3.3.5.2 | Приключване на гаранционна поддръжка |  | 1d | 2014-03-21 | 2014-03-21 | 247 | 175d |  | start no earlier than 2009-11-23 | 8h |

| ID | WBS | Task | Type | Duration | Start | Finish | Predecessors | Baseline start | Baseline finish | Baseline duration | Total slack | Free slack | Work |
| --- | --- | --- | --- | --- | --- | --- | --- | --- | --- | --- | --- | --- | --- |
| 249 | 4 | **ОП4 "Разработване на централна система за мобилна нотификация и информационно-справочна дейност за гражданите и бизнеса"** |  | 458d | 2012-06-20 | 2014-03-21 |  | 2003-09-29 | 2003-09-29 | 1d | 175d |  | 7184h |
| 250 | 4.1 | **Фаза Планиране** |  | 62d | 2012-06-20 | 2012-09-13 |  |  |  |  | 175d |  | 1608h |
| 251 | 4.1.1 | **I1 Планиране на системата** |  | 31d | 2012-06-20 | 2012-08-01 |  |  |  |  | 175d |  | 1528h |
| 252 | 4.1.1.1 | **Изграждане на механизми за управление** |  | 10d | 2012-06-20 | 2012-07-03 |  |  |  |  | 623d | 0d | 400h |
| 253 | 4.1.1.1.1 | Уточняване на организационната схема на проекта |  | 10d | 2012-06-20 | 2012-07-03 |  |  |  |  | 623d | 0d | 80h |
| 254 | 4.1.1.1.2 | Уточняване на процедурите за управление на проекта |  | 10d | 2012-06-20 | 2012-07-03 | 253SS |  |  |  | 623d |  | 80h |
| 255 | 4.1.1.1.3 | Подготовка на главен план |  | 10d | 2012-06-20 | 2012-07-03 | 253SS |  |  |  | 623d |  | 80h |
| 256 | 4.1.1.1.4 | Подготовка на план за управление на качеството |  | 10d | 2012-06-20 | 2012-07-03 | 253SS |  |  |  | 623d |  | 80h |
| 257 | 4.1.1.1.5 | Среща за стартиране на проекта (1 ден в посочения период) |  | 10d | 2012-06-20 | 2012-07-03 | 253SS |  |  |  | 623d |  | 80h |
| 258 | 4.1.1.2 | **Изграждане на проектната инфраструктура** |  | 20d | 2012-06-20 | 2012-07-17 | 252SS |  |  |  | 613d | 0d | 800h |
| 259 | 4.1.1.2.1 | Доуточняване на съществуващия инфраструктурен модел |  | 20d | 2012-06-20 | 2012-07-17 |  |  |  |  | 613d |  | 160h |
| 260 | 4.1.1.2.2 | Изграждане на инфраструктурa за проектиране |  | 20d | 2012-06-20 | 2012-07-17 |  |  |  |  | 613d |  | 160h |
| 261 | 4.1.1.2.3 | Изграждане на инфраструктурa за разработка |  | 20d | 2012-06-20 | 2012-07-17 |  |  |  |  | 613d |  | 160h |
| 262 | 4.1.1.2.4 | Изграждане на инфраструктурa за тестване |  | 20d | 2012-06-20 | 2012-07-17 |  |  |  |  | 613d |  | 160h |
| 263 | 4.1.1.2.5 | Изграждане на инфраструктурa за управление на проекта |  | 20d | 2012-06-20 | 2012-07-17 |  |  |  |  | 613d |  | 160h |
| 264 | 4.1.1.3 | Разширяване на функционалните изисквания |  | 30d | 2012-06-20 | 2012-07-31 | 258SS |  |  |  | 603d |  | 160h |
| 265 | 4.1.1.4 | Разширяване на нефункционалните изисквания |  | 30d | 2012-06-20 | 2012-07-31 | 258SS |  |  |  | 175d | 0d | 160h |
| 266 | 4.1.1.5 | Предаване на итерация |  | 1d | 2012-08-01 | 2012-08-01 | 265 |  |  |  | 175d | 0d | 8h |
| 267 | 4.1.2 | I1 Оценка и отразяване на корекции |  | 30d | 2012-08-02 | 2012-09-12 | 266 |  |  |  | 571d | 0d | 80h |
| 268 | 4.1.3 | I1 Приемане на итерация | milestone | 1d | 2012-09-13 | 2012-09-13 | 267 |  |  |  | 571d |  |  |
| 269 | 4.2 | **Фаза Проектиране** |  | 45d | 2012-08-02 | 2012-10-03 |  |  |  |  | 175d |  | 1840h |
| 270 | 4.2.1 | **E1 Разработване на Аналитичния и Дизайн модела** |  | 45d | 2012-08-02 | 2012-10-03 | 266 |  |  |  | 175d |  | 1760h |
| 271 | 4.2.1.1 | **Разработване на Бизнес модел на системата** |  | 20d | 2012-08-02 | 2012-08-29 |  |  |  |  | 567d | 0d | 280h |
| 272 | 4.2.1.1.1 | Уточняване на множеството бизнес процеси в системата |  | 10d | 2012-08-02 | 2012-08-15 |  |  |  |  | 577d |  | 80h |
| 273 | 4.2.1.1.2 | Доуточняване на модела на данните |  | 10d | 2012-08-02 | 2012-08-15 |  |  |  |  | 577d |  | 80h |
| 274 | 4.2.1.1.3 | Доуточняване на модела на услугите |  | 10d | 2012-08-02 | 2012-08-15 |  |  |  |  | 567d | 0d | 80h |
| 275 | 4.2.1.1.4 | Разработване на софтуерната архитектура |  | 10d | 2012-08-16 | 2012-08-29 | 274 |  |  |  | 567d |  | 40h |

| ID | WBS | Task | Type | Duration | Start | Finish | Predecessors | Total slack | Free slack | Work |
| --- | --- | --- | --- | --- | --- | --- | --- | --- | --- | --- |
| 276 | 4.2.1.2 | **Разработване на архитектурен прототип** |  | 15d | 2012-08-30 | 2012-09-19 | 271 | 567d |  | 360h |
| 277 | 4.2.1.2.1 | Детайлиране на архитектурния прототип |  | 15d | 2012-08-30 | 2012-09-19 |  | 567d |  | 120h |
| 278 | 4.2.1.2.2 | Изграждане на архитектурния прототип |  | 15d | 2012-08-30 | 2012-09-19 |  | 567d |  | 120h |
| 279 | 4.2.1.2.3 | Предаване на архитектурния прототип |  | 15d | 2012-08-30 | 2012-09-19 |  | 567d |  | 120h |
| 280 | 4.2.1.3 | **Разработване на Тестов модел на системата** |  | 35d | 2012-08-02 | 2012-09-19 |  | 567d |  | 1120h |
| 281 | 4.2.1.3.1 | Подготовка на процедури за тестване |  | 35d | 2012-08-02 | 2012-09-19 |  | 567d |  | 280h |
| 282 | 4.2.1.3.2 | Разработване на процедури за приемане |  | 35d | 2012-08-02 | 2012-09-19 |  | 567d |  | 280h |
| 283 | 4.2.1.3.3 | Разработване на тестов план |  | 35d | 2012-08-02 | 2012-09-19 |  | 567d |  | 280h |
| 284 | 4.2.1.3.4 | Разработване на тестов модел |  | 35d | 2012-08-02 | 2012-09-19 |  | 567d |  | 280h |
| 285 | 4.2.1.4 | Дизайн модел на бинес функционалности група 1 (БФГ1) |  | 45d | 2012-08-02 | 2012-10-03 |  | 557d |  |  |
| 286 | 4.2.1.5 | Дизайн модел на бинес функционалности група 2 (БФГ2) |  | 45d | 2012-08-02 | 2012-10-03 |  | 557d |  |  |
| 287 | 4.2.1.6 | Дизайн модел на бинес функционалности група 3 (БФГ3) |  | 45d | 2012-08-02 | 2012-10-03 |  | 557d |  |  |
| 288 | 4.2.1.7 | Предаване на итерация | milestone | 1d | 2012-08-02 | 2012-08-02 |  | 175d | 0d |  |
| 289 | 4.2.2 | E1 Оценка и отразяване на корекции |  | 30d | 2012-08-03 | 2012-09-13 | 288 | 570d | 0d | 80h |
| 290 | 4.2.3 | E1 Приемане на итерация | milestone | 1d | 2012-09-14 | 2012-09-14 | 289 | 570d |  |  |
| 291 | 4.3 | **Фаза Изграждане** |  | 154d | 2012-08-03 | 2013-03-06 |  | 175d |  | 1200h |
| 292 | 4.3.1 | **C1 Изграждане на БФГ1** |  | 60d | 2012-08-03 | 2012-10-25 | 288 | 175d |  | 280h |
| 293 | 4.3.1.1 | Разработване на модела на кода на БФГ1 |  | 60d | 2012-08-03 | 2012-10-25 |  | 541d |  |  |
| 294 | 4.3.1.2 | Провеждане на първични тестове на разработените модули от БФГ1 |  | 35d | 2012-08-03 | 2012-09-20 |  | 175d | 0d | 280h |
| 295 | 4.3.1.3 | Предаване на итерация | milestone | 1d | 2012-09-21 | 2012-09-21 | 294 | 175d | 0d |  |
| 296 | 4.3.2 | C1 Отразяване на корекции |  | 30d | 2012-09-24 | 2012-11-02 | 295 | 534d | 0d | 40h |
| 297 | 4.3.3 | C1 Приемане на итерация | milestone | 1d | 2012-11-05 | 2012-11-05 | 296 | 534d |  |  |
| 298 | 4.3.4 | **C2 Изграждане на БФГ2** |  | 60d | 2012-09-24 | 2012-12-14 | 295 | 175d |  | 400h |
| 299 | 4.3.4.1 | Разработване на модела на кода на БФГ2 |  | 60d | 2012-09-24 | 2012-12-14 |  | 505d |  |  |
| 300 | 4.3.4.2 | Провеждане на първични тестове на разработените модули от БФГ2 |  | 40d | 2012-09-24 | 2012-11-16 |  | 175d | 0d | 400h |
| 301 | 4.3.4.3 | Предаване на итерация | milestone | 1d | 2012-11-19 | 2012-11-19 | 300 | 175d | 0d |  |
| 302 | 4.3.5 | C2 Отразяване на корекции |  | 30d | 2012-11-20 | 2012-12-31 | 301 | 493d | 0d | 40h |
| 303 | 4.3.6 | C2 Приемане на итерация | milestone | 1d | 2013-01-01 | 2013-01-01 | 302 | 493d |  |  |

| ID | WBS | Task | Type | Duration | Start | Finish | Predecessors | Baseline start | Baseline finish | Baseline duration | Total slack | Free slack | Constraint | Work |
| --- | --- | --- | --- | --- | --- | --- | --- | --- | --- | --- | --- | --- | --- | --- |
| 304 | 4.3.7 | **C3 Изграждане на БФГ3** |  | 46d | 2012-11-20 | 2013-01-22 | 301 |  |  |  | 175d | 0d |  | 400h |
| 305 | 4.3.7.1 | Разработване на модела на кода на БФГ3 |  | 45d | 2012-11-20 | 2013-01-21 |  |  |  |  | 176d |  |  |  |
| 306 | 4.3.7.2 | Провеждане на първични тестове на разработените модули от БФГ3 |  | 45d | 2012-11-20 | 2013-01-21 |  |  |  |  | 175d | 0d |  | 400h |
| 307 | 4.3.7.3 | Предаване на итерация | milestone | 1d | 2013-01-22 | 2013-01-22 | 306 |  |  |  | 175d | 0d |  |  |
| 308 | 4.3.8 | C3 Отразяване на корекции |  | 30d | 2013-01-23 | 2013-03-05 | 307 |  |  |  | 447d | 0d |  | 40h |
| 309 | 4.3.9 | C3 Приемане на итерация | milestone | 1d | 2013-03-06 | 2013-03-06 | 308 |  |  |  | 447d |  |  |  |
| 310 | 4.4 | **Фаза Внедряване** |  | 41d | 2013-01-23 | 2013-03-20 |  |  |  |  | 175d |  |  | 440h |
| 311 | 4.4.1 | **Т1 Предаване на модули с БФГ1** |  | 21d | 2013-01-23 | 2013-02-20 | 304 |  |  |  | 175d |  |  | 400h |
| 312 | 4.4.1.1 | Функционални и интегрални тестове |  | 5d | 2013-01-23 | 2013-01-29 |  |  |  |  | 473d |  |  | 40h |
| 313 | 4.4.1.2 | Провеждане на тестове по приемане на функционалността |  | 10d | 2013-01-23 | 2013-02-05 |  |  |  |  | 468d |  |  | 80h |
| 314 | 4.4.1.3 | Провеждане на курсове за обучение на обучители на потребители |  | 15d | 2013-01-23 | 2013-02-12 |  |  |  |  | 463d |  |  | 120h |
| 315 | 4.4.1.4 | Провеждане на курсове за обучение на системни администратори |  | 15d | 2013-01-23 | 2013-02-12 |  |  |  |  | 175d | 0d |  | 120h |
| 316 | 4.4.1.5 | Пускане в експлоатация |  | 5d | 2013-02-13 | 2013-02-19 | 315 |  |  |  | 175d | 0d |  | 40h |
| 317 | 4.4.1.6 | Предаване на итерация | milestone | 1d | 2013-02-20 | 2013-02-20 | 316 |  |  |  | 457d |  |  |  |
| 318 | 4.4.2 | Т1 Отразяване на корекции |  | 20d | 2013-02-20 | 2013-03-19 | 316 |  |  |  | 175d | 0d |  | 40h |
| 319 | 4.4.3 | Т1 Приемане на итерация | milestone | 1d | 2013-03-20 | 2013-03-20 | 318 |  |  |  | 175d | 0d |  |  |
| 320 | 4.5 | **Гаранционен период** |  | 262d | 2013-03-21 | 2014-03-21 | 319 |  |  |  | 175d |  |  | 2096h |
| 321 | 4.5.1 | Гаранционна поддръжка |  | 261d | 2013-03-21 | 2014-03-20 |  |  |  |  | 175d | 0d |  | 2088h |
| 322 | 4.5.2 | Приключване на гаранционна поддръжка |  | 1d | 2014-03-21 | 2014-03-21 | 321 |  |  |  | 175d |  | start no earlier than 2009-11-23 | 8h |
| 323 | 5 | **ОП5 "Изграждане на централизирана и интегрирана в администрациите система за демократично ориентирано вземане на решения с участието на гражданите и бизнеса"** |  | 458d | 2012-06-20 | 2014-03-21 |  | 2003-09-29 | 2003-09-29 | 1d | 175d |  |  | 7224h |
| 324 | 5.1 | **Фаза Планиране** |  | 62d | 2012-06-20 | 2012-09-13 |  |  |  |  | 175d |  |  | 1608h |
| 325 | 5.1.1 | **I1 Планиране на системата** |  | 31d | 2012-06-20 | 2012-08-01 |  |  |  |  | 175d |  |  | 1528h |
| 326 | 5.1.1.1 | **Изграждане на механизми за управление** |  | 10d | 2012-06-20 | 2012-07-03 |  |  |  |  | 623d | 0d |  | 400h |
| 327 | 5.1.1.1.1 | Уточняване на организационната схема на проекта |  | 10d | 2012-06-20 | 2012-07-03 |  |  |  |  | 623d | 0d |  | 80h |
| 328 | 5.1.1.1.2 | Уточняване на процедурите за управление на проекта |  | 10d | 2012-06-20 | 2012-07-03 | 327SS |  |  |  | 623d |  |  | 80h |
| 329 | 5.1.1.1.3 | Подготовка на главен план |  | 10d | 2012-06-20 | 2012-07-03 | 327SS |  |  |  | 623d |  |  | 80h |
| 330 | 5.1.1.1.4 | Подготовка на план за управление на качеството |  | 10d | 2012-06-20 | 2012-07-03 | 327SS |  |  |  | 623d |  |  | 80h |
| 331 | 5.1.1.1.5 | Среща за стартиране на проекта (1 ден в посочения период) |  | 10d | 2012-06-20 | 2012-07-03 | 327SS |  |  |  | 623d |  |  | 80h |

| ID | WBS | Task | Type | Duration | Start | Finish | Predecessors | Total slack | Free slack | Work |
| --- | --- | --- | --- | --- | --- | --- | --- | --- | --- | --- |
| 332 | 5.1.1.2 | **Изграждане на проектната инфраструктура** |  | 20d | 2012-06-20 | 2012-07-17 | 326SS | 613d | 0d | 800h |
| 333 | 5.1.1.2.1 | Доуточняване на съществуващия инфраструктурен модел |  | 20d | 2012-06-20 | 2012-07-17 |  | 613d |  | 160h |
| 334 | 5.1.1.2.2 | Изграждане на инфраструктурa за проектиране |  | 20d | 2012-06-20 | 2012-07-17 |  | 613d |  | 160h |
| 335 | 5.1.1.2.3 | Изграждане на инфраструктурa за разработка |  | 20d | 2012-06-20 | 2012-07-17 |  | 613d |  | 160h |
| 336 | 5.1.1.2.4 | Изграждане на инфраструктурa за тестване |  | 20d | 2012-06-20 | 2012-07-17 |  | 613d |  | 160h |
| 337 | 5.1.1.2.5 | Изграждане на инфраструктурa за управление на проекта |  | 20d | 2012-06-20 | 2012-07-17 |  | 613d |  | 160h |
| 338 | 5.1.1.3 | Разширяване на функционалните изисквания |  | 30d | 2012-06-20 | 2012-07-31 | 332SS | 603d |  | 160h |
| 339 | 5.1.1.4 | Разширяване на нефункционалните изисквания |  | 30d | 2012-06-20 | 2012-07-31 | 332SS | 141d | 0d | 160h |
| 340 | 5.1.1.5 | Предаване на итерация |  | 1d | 2012-08-01 | 2012-08-01 | 339 | 141d | 0d | 8h |
| 341 | 5.1.2 | I1 Оценка и отразяване на корекции |  | 30d | 2012-08-02 | 2012-09-12 | 340 | 571d | 0d | 80h |
| 342 | 5.1.3 | I1 Приемане на итерация | milestone | 1d | 2012-09-13 | 2012-09-13 | 341 | 571d |  |  |
| 343 | 5.2 | **Фаза Проектиране** |  | 45d | 2012-08-02 | 2012-10-03 |  | 175d |  | 1840h |
| 344 | 5.2.1 | **E1 Разработване на Аналитичния и Дизайн модела** |  | 45d | 2012-08-02 | 2012-10-03 | 340 | 175d |  | 1760h |
| 345 | 5.2.1.1 | **Разработване на Бизнес модел на системата** |  | 20d | 2012-08-02 | 2012-08-29 |  | 567d | 0d | 280h |
| 346 | 5.2.1.1.1 | Уточняване на множеството бизнес процеси в системата |  | 10d | 2012-08-02 | 2012-08-15 |  | 577d |  | 80h |
| 347 | 5.2.1.1.2 | Доуточняване на модела на данните |  | 10d | 2012-08-02 | 2012-08-15 |  | 577d |  | 80h |
| 348 | 5.2.1.1.3 | Доуточняване на модела на услугите |  | 10d | 2012-08-02 | 2012-08-15 |  | 567d | 0d | 80h |
| 349 | 5.2.1.1.4 | Разработване на софтуерната архитектура |  | 10d | 2012-08-16 | 2012-08-29 | 348 | 567d |  | 40h |
| 350 | 5.2.1.2 | **Разработване на архитектурен прототип** |  | 15d | 2012-08-30 | 2012-09-19 | 345 | 567d |  | 360h |
| 351 | 5.2.1.2.1 | Детайлиране на архитектурния прототип |  | 15d | 2012-08-30 | 2012-09-19 |  | 567d |  | 120h |
| 352 | 5.2.1.2.2 | Изграждане на архитектурния прототип |  | 15d | 2012-08-30 | 2012-09-19 |  | 567d |  | 120h |
| 353 | 5.2.1.2.3 | Предаване на архитектурния прототип |  | 15d | 2012-08-30 | 2012-09-19 |  | 567d |  | 120h |
| 354 | 5.2.1.3 | **Разработване на Тестов модел на системата** |  | 35d | 2012-08-02 | 2012-09-19 |  | 567d |  | 1120h |
| 355 | 5.2.1.3.1 | Подготовка на процедури за тестване |  | 35d | 2012-08-02 | 2012-09-19 |  | 567d |  | 280h |
| 356 | 5.2.1.3.2 | Разработване на процедури за приемане |  | 35d | 2012-08-02 | 2012-09-19 |  | 567d |  | 280h |
| 357 | 5.2.1.3.3 | Разработване на тестов план |  | 35d | 2012-08-02 | 2012-09-19 |  | 567d |  | 280h |
| 358 | 5.2.1.3.4 | Разработване на тестов модел |  | 35d | 2012-08-02 | 2012-09-19 |  | 567d |  | 280h |
| 359 | 5.2.1.4 | Дизайн модел на бинес функционалности група 1 (БФГ1) |  | 45d | 2012-08-02 | 2012-10-03 |  | 557d |  |  |
| 360 | 5.2.1.5 | Дизайн модел на бинес функционалности група 2 (БФГ2) |  | 45d | 2012-08-02 | 2012-10-03 |  | 557d |  |  |
| 361 | 5.2.1.6 | Дизайн модел на бинес функционалности група 3 (БФГ3) |  | 45d | 2012-08-02 | 2012-10-03 |  | 557d |  |  |
| 362 | 5.2.1.7 | Предаване на итерация | milestone | 1d | 2012-08-02 | 2012-08-02 |  | 141d | 0d |  |
| 363 | 5.2.2 | E1 Оценка и отразяване на корекции |  | 30d | 2012-08-03 | 2012-09-13 | 362 | 570d | 0d | 80h |
| 364 | 5.2.3 | E1 Приемане на итерация | milestone | 1d | 2012-09-14 | 2012-09-14 | 363 | 570d |  |  |

| ID | WBS | Task | Type | Duration | Start | Finish | Predecessors | Total slack | Free slack | Work |
| --- | --- | --- | --- | --- | --- | --- | --- | --- | --- | --- |
| 365 | 5.3 | **Фаза Изграждане** |  | 154d | 2012-08-03 | 2013-03-06 |  | 175d |  | 1200h |
| 366 | 5.3.1 | **C1 Изграждане на БФГ1** |  | 60d | 2012-08-03 | 2012-10-25 | 362 | 175d |  | 280h |
| 367 | 5.3.1.1 | Разработване на модела на кода на БФГ1 |  | 60d | 2012-08-03 | 2012-10-25 |  | 541d |  |  |
| 368 | 5.3.1.2 | Провеждане на първични тестове на разработените модули от БФГ1 |  | 20d | 2012-08-03 | 2012-08-30 |  | 175d | 0d | 280h |
| 369 | 5.3.1.3 | Предаване на итерация | milestone | 1d | 2012-08-31 | 2012-08-31 | 368 | 175d | 0d |  |
| 370 | 5.3.2 | C1 Отразяване на корекции |  | 30d | 2012-09-03 | 2012-10-12 | 369 | 549d | 0d | 40h |
| 371 | 5.3.3 | C1 Приемане на итерация | milestone | 1d | 2012-10-15 | 2012-10-15 | 370 | 549d |  |  |
| 372 | 5.3.4 | **C2 Изграждане на БФГ2** |  | 60d | 2012-09-03 | 2012-11-23 | 369 | 175d |  | 400h |
| 373 | 5.3.4.1 | Разработване на модела на кода на БФГ2 |  | 60d | 2012-09-03 | 2012-11-23 |  | 520d |  |  |
| 374 | 5.3.4.2 | Провеждане на първични тестове на разработените модули от БФГ2 |  | 50d | 2012-09-03 | 2012-11-09 |  | 175d | 0d | 400h |
| 375 | 5.3.4.3 | Предаване на итерация | milestone | 1d | 2012-11-12 | 2012-11-12 | 374 | 175d | 0d |  |
| 376 | 5.3.5 | C2 Отразяване на корекции |  | 30d | 2012-11-13 | 2012-12-24 | 375 | 498d | 0d | 40h |
| 377 | 5.3.6 | C2 Приемане на итерация | milestone | 1d | 2012-12-25 | 2012-12-25 | 376 | 498d |  |  |
| 378 | 5.3.7 | **C3 Изграждане на БФГ3** |  | 51d | 2012-11-13 | 2013-01-22 | 375 | 175d | 0d | 400h |
| 379 | 5.3.7.1 | Разработване на модела на кода на БФГ3 |  | 50d | 2012-11-13 | 2013-01-21 |  | 176d |  |  |
| 380 | 5.3.7.2 | Провеждане на първични тестове на разработените модули от БФГ3 |  | 50d | 2012-11-13 | 2013-01-21 |  | 175d | 0d | 400h |
| 381 | 5.3.7.3 | Предаване на итерация | milestone | 1d | 2013-01-22 | 2013-01-22 | 380 | 175d | 0d |  |
| 382 | 5.3.8 | C3 Отразяване на корекции |  | 30d | 2013-01-23 | 2013-03-05 | 381 | 447d | 0d | 40h |
| 383 | 5.3.9 | C3 Приемане на итерация | milestone | 1d | 2013-03-06 | 2013-03-06 | 382 | 447d |  |  |
| 384 | 5.4 | **Фаза Внедряване** |  | 41d | 2013-01-23 | 2013-03-20 |  | 175d |  | 480h |
| 385 | 5.4.1 | **Т1 Предаване на модули с БФГ1** |  | 21d | 2013-01-23 | 2013-02-20 | 378 | 175d |  | 440h |
| 386 | 5.4.1.1 | Мигриране на данни |  | 5d | 2013-01-23 | 2013-01-29 |  | 473d |  | 40h |
| 387 | 5.4.1.2 | Функционални и интегрални тестове |  | 5d | 2013-01-23 | 2013-01-29 |  | 473d |  | 40h |
| 388 | 5.4.1.3 | Провеждане на тестове по приемане на функционалността |  | 10d | 2013-01-23 | 2013-02-05 |  | 468d |  | 80h |
| 389 | 5.4.1.4 | Провеждане на курсове за обучение на обучители на потребители |  | 15d | 2013-01-23 | 2013-02-12 |  | 463d |  | 120h |
| 390 | 5.4.1.5 | Провеждане на курсове за обучение на системни администратори |  | 15d | 2013-01-23 | 2013-02-12 |  | 175d | 0d | 120h |
| 391 | 5.4.1.6 | Пускане в експлоатация |  | 5d | 2013-02-13 | 2013-02-19 | 390 | 175d | 0d | 40h |
| 392 | 5.4.1.7 | Предаване на итерация | milestone | 1d | 2013-02-20 | 2013-02-20 | 391 | 457d |  |  |
| 393 | 5.4.2 | Т1 Отразяване на корекции |  | 20d | 2013-02-20 | 2013-03-19 | 391 | 175d | 0d | 40h |
| 394 | 5.4.3 | Т1 Приемане на итерация | milestone | 1d | 2013-03-20 | 2013-03-20 | 393 | 175d | 0d |  |

| ID | WBS | Task | Type | Duration | Start | Finish | Predecessors | Baseline start | Baseline finish | Baseline duration | Total slack | Free slack | Constraint | Work |
| --- | --- | --- | --- | --- | --- | --- | --- | --- | --- | --- | --- | --- | --- | --- |
| 395 | 5.5 | **Гаранционен период** |  | 262d | 2013-03-21 | 2014-03-21 | 394 |  |  |  | 175d |  |  | 2096h |
| 396 | 5.5.1 | Гаранционна поддръжка |  | 261d | 2013-03-21 | 2014-03-20 |  |  |  |  | 175d | 0d |  | 2088h |
| 397 | 5.5.2 | Приключване на гаранционна поддръжка |  | 1d | 2014-03-21 | 2014-03-21 | 396 |  |  |  | 175d |  | start no earlier than 2009-11-23 | 8h |
| 398 | 6 | **ОП6 "Централизирана система за управление на комуникационната и хардуерна инфраструктура посредством прилагане на съвременни технологии, платформи и консолидация чрез виртуализация"** |  | 458d | 2012-06-20 | 2014-03-21 |  | 2003-09-29 | 2003-09-29 | 1d | 175d |  |  | 6784h |
| 399 | 6.1 | **Фаза Планиране** |  | 62d | 2012-06-20 | 2012-09-13 |  |  |  |  | 175d |  |  | 1448h |
| 400 | 6.1.1 | **I1 Планиране на системата** |  | 31d | 2012-06-20 | 2012-08-01 |  |  |  |  | 175d |  |  | 1368h |
| 401 | 6.1.1.1 | **Изграждане на механизми за управление** |  | 10d | 2012-06-20 | 2012-07-03 |  |  |  |  | 623d | 0d |  | 400h |
| 402 | 6.1.1.1.1 | Уточняване на организационната схема на проекта |  | 10d | 2012-06-20 | 2012-07-03 |  |  |  |  | 623d | 0d |  | 80h |
| 403 | 6.1.1.1.2 | Уточняване на процедурите за управление на проекта |  | 10d | 2012-06-20 | 2012-07-03 | 402SS |  |  |  | 623d |  |  | 80h |
| 404 | 6.1.1.1.3 | Подготовка на главен план |  | 10d | 2012-06-20 | 2012-07-03 | 402SS |  |  |  | 623d |  |  | 80h |
| 405 | 6.1.1.1.4 | Подготовка на план за управление на качеството |  | 10d | 2012-06-20 | 2012-07-03 | 402SS |  |  |  | 623d |  |  | 80h |
| 406 | 6.1.1.1.5 | Среща за стартиране на проекта (1 ден в посочения период) |  | 10d | 2012-06-20 | 2012-07-03 | 402SS |  |  |  | 623d |  |  | 80h |
| 407 | 6.1.1.2 | **Изграждане на проектната инфраструктура** |  | 20d | 2012-06-20 | 2012-07-17 | 401SS |  |  |  | 613d | 0d |  | 800h |
| 408 | 6.1.1.2.1 | Доуточняване на съществуващия инфраструктурен модел |  | 20d | 2012-06-20 | 2012-07-17 |  |  |  |  | 613d |  |  | 160h |
| 409 | 6.1.1.2.2 | Изграждане на инфраструктурa за проектиране |  | 20d | 2012-06-20 | 2012-07-17 |  |  |  |  | 613d |  |  | 160h |
| 410 | 6.1.1.2.3 | Изграждане на инфраструктурa за разработка |  | 20d | 2012-06-20 | 2012-07-17 |  |  |  |  | 613d |  |  | 160h |
| 411 | 6.1.1.2.4 | Изграждане на инфраструктурa за тестване |  | 20d | 2012-06-20 | 2012-07-17 |  |  |  |  | 613d |  |  | 160h |
| 412 | 6.1.1.2.5 | Изграждане на инфраструктурa за управление на проекта |  | 20d | 2012-06-20 | 2012-07-17 |  |  |  |  | 613d |  |  | 160h |
| 413 | 6.1.1.3 | Разширяване на изискванията |  | 30d | 2012-06-20 | 2012-07-31 | 407SS |  |  |  | 141d | 0d |  | 160h |
| 414 | 6.1.1.4 | Предаване на итерация |  | 1d | 2012-08-01 | 2012-08-01 | 413 |  |  |  | 141d | 0d |  | 8h |
| 415 | 6.1.2 | I1 Оценка и отразяване на корекции |  | 30d | 2012-08-02 | 2012-09-12 | 414 |  |  |  | 571d | 0d |  | 80h |
| 416 | 6.1.3 | I1 Приемане на итерация | milestone | 1d | 2012-09-13 | 2012-09-13 | 415 |  |  |  | 571d |  |  |  |
| 417 | 6.2 | **Фаза Проектиране** |  | 45d | 2012-08-02 | 2012-10-03 |  |  |  |  | 175d |  |  | 1560h |
| 418 | 6.2.1 | **E1 Разработване на Архитектурата и Дизайн модела** |  | 45d | 2012-08-02 | 2012-10-03 | 414 |  |  |  | 175d |  |  | 1480h |
| 419 | 6.2.1.1 | Разработване на софтуерната архитектура |  | 1d | 2012-08-02 | 2012-08-02 |  |  |  |  | 586d | 0d |  |  |

| ID | WBS | Task | Type | Duration | Start | Finish | Predecessors | Total slack | Free slack | Work |
| --- | --- | --- | --- | --- | --- | --- | --- | --- | --- | --- |
| 420 | 6.2.1.2 | **Разработване на архитектурен прототип** |  | 15d | 2012-08-03 | 2012-08-23 | 419 | 586d |  | 360h |
| 421 | 6.2.1.2.1 | Детайлиране на архитектурния прототип |  | 15d | 2012-08-03 | 2012-08-23 |  | 586d |  | 120h |
| 422 | 6.2.1.2.2 | Изграждане на архитектурния прототип |  | 15d | 2012-08-03 | 2012-08-23 |  | 586d |  | 120h |
| 423 | 6.2.1.2.3 | Предаване на архитектурния прототип |  | 15d | 2012-08-03 | 2012-08-23 |  | 586d |  | 120h |
| 424 | 6.2.1.3 | **Разработване на Тестов модел на системата** |  | 35d | 2012-08-02 | 2012-09-19 |  | 567d |  | 1120h |
| 425 | 6.2.1.3.1 | Подготовка на процедури за тестване |  | 35d | 2012-08-02 | 2012-09-19 |  | 567d |  | 280h |
| 426 | 6.2.1.3.2 | Разработване на процедури за приемане |  | 35d | 2012-08-02 | 2012-09-19 |  | 567d |  | 280h |
| 427 | 6.2.1.3.3 | Разработване на тестов план |  | 35d | 2012-08-02 | 2012-09-19 |  | 567d |  | 280h |
| 428 | 6.2.1.3.4 | Разработване на тестов модел |  | 35d | 2012-08-02 | 2012-09-19 |  | 567d |  | 280h |
| 429 | 6.2.1.4 | Подготовка на Дизайн модел |  | 45d | 2012-08-02 | 2012-10-03 |  | 557d |  |  |
| 430 | 6.2.1.5 | Предаване на итерация | milestone | 1d | 2012-08-02 | 2012-08-02 |  | 141d | 0d |  |
| 431 | 6.2.2 | E1 Оценка и отразяване на корекции |  | 30d | 2012-08-03 | 2012-09-13 | 430 | 570d | 0d | 80h |
| 432 | 6.2.3 | E1 Приемане на итерация | milestone | 1d | 2012-09-14 | 2012-09-14 | 431 | 570d |  |  |
| 433 | 6.3 | **Фаза Изграждане** |  | 154d | 2012-08-03 | 2013-03-06 |  | 175d |  | 1200h |
| 434 | 6.3.1 | **C1 Изграждане** |  | 60d | 2012-08-03 | 2012-10-25 | 430 | 175d |  | 280h |
| 435 | 6.3.1.1 | Разработване на модела на кода |  | 60d | 2012-08-03 | 2012-10-25 |  | 541d |  |  |
| 436 | 6.3.1.2 | Провеждане на първични тестове |  | 35d | 2012-08-03 | 2012-09-20 |  | 141d | 0d | 280h |
| 437 | 6.3.1.3 | Предаване на итерация | milestone | 1d | 2012-09-21 | 2012-09-21 | 436 | 141d | 0d |  |
| 438 | 6.3.2 | C1 Отразяване на корекции |  | 30d | 2012-09-24 | 2012-11-02 | 437 | 534d | 0d | 40h |
| 439 | 6.3.3 | C1 Приемане на итерация | milestone | 1d | 2012-11-05 | 2012-11-05 | 438 | 534d |  |  |
| 440 | 6.3.4 | **C2 Изграждане** |  | 60d | 2012-09-24 | 2012-12-14 | 437 | 175d |  | 400h |
| 441 | 6.3.4.1 | Разработване на модела на кода |  | 60d | 2012-09-24 | 2012-12-14 |  | 505d |  |  |
| 442 | 6.3.4.2 | Провеждане на първични тестове |  | 40d | 2012-09-24 | 2012-11-16 |  | 175d | 0d | 400h |
| 443 | 6.3.4.3 | Предаване на итерация | milestone | 1d | 2012-11-19 | 2012-11-19 | 442 | 175d | 0d |  |
| 444 | 6.3.5 | C2 Отразяване на корекции |  | 30d | 2012-11-20 | 2012-12-31 | 443 | 493d | 0d | 40h |
| 445 | 6.3.6 | C2 Приемане на итерация | milestone | 1d | 2013-01-01 | 2013-01-01 | 444 | 493d |  |  |

| ID | WBS | Task | Type | Duration | Start | Finish | Predecessors | Total slack | Free slack | Constraint | Work |
| --- | --- | --- | --- | --- | --- | --- | --- | --- | --- | --- | --- |
| 446 | 6.3.7 | **C3 Изграждане** |  | 46d | 2012-11-20 | 2013-01-22 | 443 | 175d | 0d |  | 400h |
| 447 | 6.3.7.1 | Разработване на модела на кода |  | 45d | 2012-11-20 | 2013-01-21 |  | 176d |  |  |  |
| 448 | 6.3.7.2 | Провеждане на първични тестове |  | 45d | 2012-11-20 | 2013-01-21 |  | 175d | 0d |  | 400h |
| 449 | 6.3.7.3 | Предаване на итерация | milestone | 1d | 2013-01-22 | 2013-01-22 | 448 | 175d | 0d |  |  |
| 450 | 6.3.8 | C3 Отразяване на корекции |  | 30d | 2013-01-23 | 2013-03-05 | 449 | 447d | 0d |  | 40h |
| 451 | 6.3.9 | C3 Приемане на итерация | milestone | 1d | 2013-03-06 | 2013-03-06 | 450 | 447d |  |  |  |
| 452 | 6.4 | **Фаза Внедряване** |  | 41d | 2013-01-23 | 2013-03-20 |  | 175d |  |  | 480h |
| 453 | 6.4.1 | **Т1 Предаване** |  | 21d | 2013-01-23 | 2013-02-20 | 446 | 175d |  |  | 440h |
| 454 | 6.4.1.1 | Мигриране на данни |  | 5d | 2013-01-23 | 2013-01-29 |  | 473d |  |  | 40h |
| 455 | 6.4.1.2 | Функционални и интегрални тестове |  | 5d | 2013-01-23 | 2013-01-29 |  | 473d |  |  | 40h |
| 456 | 6.4.1.3 | Провеждане на тестове по приемане на функционалността |  | 10d | 2013-01-23 | 2013-02-05 |  | 468d |  |  | 80h |
| 457 | 6.4.1.4 | Провеждане на курсове за обучение на обучители на потребители |  | 15d | 2013-01-23 | 2013-02-12 |  | 463d |  |  | 120h |
| 458 | 6.4.1.5 | Провеждане на курсове за обучение на системни администратори |  | 15d | 2013-01-23 | 2013-02-12 |  | 175d | 0d |  | 120h |
| 459 | 6.4.1.6 | Пускане в експлоатация |  | 5d | 2013-02-13 | 2013-02-19 | 458 | 175d | 0d |  | 40h |
| 460 | 6.4.1.7 | Предаване на итерация | milestone | 1d | 2013-02-20 | 2013-02-20 | 459 | 457d |  |  |  |
| 461 | 6.4.2 | Т1 Отразяване на корекции |  | 20d | 2013-02-20 | 2013-03-19 | 459 | 175d | 0d |  | 40h |
| 462 | 6.4.3 | Т1 Приемане на итерация | milestone | 1d | 2013-03-20 | 2013-03-20 | 461 | 175d | 0d |  |  |
| 463 | 6.5 | **Гаранционен период** |  | 262d | 2013-03-21 | 2014-03-21 | 462 | 175d |  |  | 2096h |
| 464 | 6.5.1 | Гаранционна поддръжка |  | 261d | 2013-03-21 | 2014-03-20 |  | 175d | 0d |  | 2088h |
| 465 | 6.5.2 | Приключване на гаранционна поддръжка |  | 1d | 2014-03-21 | 2014-03-21 | 464 | 175d |  | start no earlier than 2009-11-23 | 8h |
| 466 | 7 | **ОП7 Разработване на унифицирани изисквания към центровете за съхранение на особено чувствителна информация** |  | 195d? | 2012-06-20 | 2013-03-19 |  | 438d |  |  |  |
| 467 | 7.1 | Проучване на световния опит и добрите практики |  | 45d? | 2012-06-20 | 2012-08-21 |  | 383d | 0d |  |  |
| 468 | 7.2 | Разработване на Единни държавни изисквания за сигурност и оперативна съвместимост на центрове за съхранение на особено чувствителна информация за нуждите на централна държавна администрация в Р България |  | 60d? | 2012-07-25 | 2012-10-16 | 467FS-20d | 383d | 0d |  |  |
| 469 | 7.3 | Разработване на Методика за изграждане и сертифициране на центрове за съхранение на особено чувствителна информация |  | 40d | 2012-09-05 | 2012-10-30 | 468SS+30d | 438d | 0d |  |  |
| 470 | 7.4 | Приемане на фаза 1 от изпълнението | milestone | 0d | 2012-12-11 | 2012-12-11 | 469FS+30d | 508d |  |  |  |
| 471 | 7.5 | Оценка на текущото състояние в пилотен център за съхранение на особено чувствителна информация |  | 30d | 2012-10-03 | 2012-11-13 | 469FS-20d | 438d | 0d |  |  |
| 472 | 7.6 | Проектиране и техническа помощ за въвеждане в експлоатация на решения, разработване и прилагане на съпътстващи организационни мерки за целите на пилотното прилагане на Единните държавни изкисвания |  | 80d | 2012-11-14 | 2013-03-05 | 471 | 438d | 0d |  |  |
| 473 | 7.7 | Редакция на материалите по Дейности 1 и 2 |  | 40d? | 2013-01-09 | 2013-03-05 | 472FF | 438d | 0d |  |  |
| 474 | 7.8 | Приемане на договора | milestone | 0d | 2013-03-19 | 2013-03-19 | 473FS+10d | 438d |  |  |  |
