# K11321 "Подобряване на административното обслужване на потребителите чрез надграждане на централните системи на електронното пр

Schedule from MS Project, 2012-06-20 to 2014-03-20.
Сирма ИТТ

## Calendars

- Standard: Mon-Fri 08:00-12:00, 13:00-17:00; Sat-Sun off.

## Resources

| Resource | Rate |
| --- | --- |
| Ръководител на проекта | 30 |
| Старши програмист 2 | 30 |
| Програмист 2 | 30 |
| Тестер | 25 |
| Документор | 20 |
| Преподавател | 20 |
| Бизнес аналитик | 30 |
| Програмист 1 | 30 |
| Старши програмист 1 | 30 |

## Schedule

| ID | WBS | Task | Type | Duration | Start | Finish | Predecessors | Baseline start | Baseline finish | Baseline duration | Total slack | Free slack | Resources | Work | Cost |
| --- | --- | --- | --- | --- | --- | --- | --- | --- | --- | --- | --- | --- | --- | --- | --- |
| 1 | 1 | **ОП1 "Създаване на регистър за електронна идентичност на потребителите"** |  | 457d | 2012-06-20 | 2014-03-20 |  | 2003-09-29 | 2003-09-29 | 1d | 0d |  |  | 7365.33h | 2,000 |
| 2 | 1.1 | **Фаза Планиране** |  | 85d | 2012-06-20 | 2012-10-16 |  |  |  |  | 0d |  |  | 1669.33h | 2,000 |
| 3 | 1.1.1 | **I1 Планиране на системата** |  | 31d | 2012-06-20 | 2012-08-01 |  |  |  |  | 0d |  |  | 1528h | 2,000 |
| 4 | 1.1.1.1 | **Изграждане на механизми за управление** |  | 10d | 2012-06-20 | 2012-07-03 |  |  |  |  | 447d | 0d |  | 400h | 2,000 |
| 5 | 1.1.1.1.1 | Уточняване на организационната схема на проекта |  | 5d | 2012-06-20 | 2012-06-26 |  |  |  |  | 623d | 0d | Преподавател; Ръководител на проекта | 80h | 2,000 |
| 6 | 1.1.1.1.2 | Уточняване на процедурите за управление на проекта |  | 10d | 2012-06-20 | 2012-07-03 | 5SS |  |  |  | 623d |  |  | 80h |  |
| 7 | 1.1.1.1.3 | Подготовка на главен план |  | 10d | 2012-06-20 | 2012-07-03 | 5SS |  |  |  | 623d |  |  | 80h |  |
| 8 | 1.1.1.1.4 | Подготовка на план за управление на качеството |  | 10d | 2012-06-20 | 2012-07-03 | 5SS |  |  |  | 623d |  |  | 80h |  |
| 9 | 1.1.1.1.5 | Среща за стартиране на проекта (1 ден в посочения период) |  | 10d | 2012-06-20 | 2012-07-03 | 5SS |  |  |  | 623d |  |  | 80h |  |
| 10 | 1.1.1.2 | **Изграждане на проектната инфраструктура** |  | 20d | 2012-06-20 | 2012-07-17 | 4SS |  |  |  | 437d | 0d |  | 800h |  |
| 11 | 1.1.1.2.1 | Доуточняване на съществуващия инфраструктурен модел |  | 20d | 2012-06-20 | 2012-07-17 |  |  |  |  | 613d |  |  | 160h |  |
| 12 | 1.1.1.2.2 | Изграждане на инфраструктурa за проектиране |  | 20d | 2012-06-20 | 2012-07-17 |  |  |  |  | 613d |  |  | 160h |  |
| 13 | 1.1.1.2.3 | Изграждане на инфраструктурa за разработка |  | 20d | 2012-06-20 | 2012-07-17 |  |  |  |  | 613d |  |  | 160h |  |
| 14 | 1.1.1.2.4 | Изграждане на инфраструктурa за тестване |  | 20d | 2012-06-20 | 2012-07-17 |  |  |  |  | 613d |  |  | 160h |  |
| 15 | 1.1.1.2.5 | Изграждане на инфраструктурa за управление на проекта |  | 20d | 2012-06-20 | 2012-07-17 |  |  |  |  | 613d |  |  | 160h |  |
| 16 | 1.1.1.3 | Разширяване на функционалните изисквания |  | 30d | 2012-06-20 | 2012-07-31 | 10SS |  |  |  | 603d |  |  | 160h |  |
| 17 | 1.1.1.4 | Разширяване на нефункционалните изисквания |  | 30d | 2012-06-20 | 2012-07-31 | 10SS |  |  |  | 0d |  |  | 160h |  |
| 18 | 1.1.1.5 | Предаване на итерация | milestone | 1d | 2012-08-01 | 2012-08-01 | 17 |  |  |  | 0d |  |  | 8h |  |
| 19 | 1.1.2 | I1 Оценка и отразяване на корекции |  | 53d | 2012-08-02 | 2012-10-15 | 18 |  |  |  | 372d | 0d |  | 141.33h |  |
| 20 | 1.1.3 | I1 Приемане на итерация | milestone | 1d | 2012-10-16 | 2012-10-16 | 19 |  |  |  | 372d |  |  |  |  |
| 21 | 1.2 | **Фаза Проектиране** |  | 102d | 2012-08-02 | 2012-12-21 |  |  |  |  | 0d |  |  | 1920h |  |
| 22 | 1.2.1 | **E1 Разработване на Аналитичния и Дизайн модела** |  | 102d | 2012-08-02 | 2012-12-21 | 18 |  |  |  | 0d |  |  | 1840h |  |
| 23 | 1.2.1.1 | **Разработване на Бизнес модел на системата** |  | 20d | 2012-08-02 | 2012-08-29 |  |  |  |  | 0d |  |  | 280h |  |
| 24 | 1.2.1.1.1 | Уточняване на множеството бизнес процеси в системата |  | 10d | 2012-08-02 | 2012-08-15 |  |  |  |  | 10d |  |  | 80h |  |
| 25 | 1.2.1.1.2 | Доуточняване на модела на данните |  | 10d | 2012-08-02 | 2012-08-15 |  |  |  |  | 10d |  |  | 80h |  |
| 26 | 1.2.1.1.3 | Доуточняване на модела на услугите |  | 10d | 2012-08-02 | 2012-08-15 |  |  |  |  | 0d |  |  | 80h |  |
| 27 | 1.2.1.1.4 | Разработване на софтуерната архитектура |  | 10d | 2012-08-16 | 2012-08-29 | 26 |  |  |  | 0d |  |  | 40h |  |

| ID | WBS | Task | Type | Duration | Start | Finish | Predecessors | Total slack | Free slack | Work |
| --- | --- | --- | --- | --- | --- | --- | --- | --- | --- | --- |
| 28 | 1.2.1.2 | **Разработване на архитектурен прототип** |  | 15d | 2012-08-30 | 2012-09-19 | 23 | 0d |  | 360h |
| 29 | 1.2.1.2.1 | Детайлиране на архитектурния прототип |  | 15d | 2012-08-30 | 2012-09-19 |  | 0d |  | 120h |
| 30 | 1.2.1.2.2 | Изграждане на архитектурния прототип |  | 15d | 2012-08-30 | 2012-09-19 |  | 0d |  | 120h |
| 31 | 1.2.1.2.3 | Предаване на архитектурния прототип |  | 15d | 2012-08-30 | 2012-09-19 |  | 0d |  | 120h |
| 32 | 1.2.1.3 | **Разработване на Тестов модел на системата** |  | 67d | 2012-09-20 | 2012-12-21 | 28 | 0d |  | 1200h |
| 33 | 1.2.1.3.1 | Подготовка на процедури за тестване |  | 35d | 2012-09-20 | 2012-11-07 |  | 356d |  | 280h |
| 34 | 1.2.1.3.2 | Разработване на процедури за приемане |  | 35d | 2012-09-20 | 2012-11-07 |  | 356d |  | 280h |
| 35 | 1.2.1.3.3 | Разработване на тестов план |  | 35d | 2012-09-20 | 2012-11-07 |  | 356d |  | 280h |
| 36 | 1.2.1.3.4 | Разработване на тестов модел |  | 35d | 2012-09-20 | 2012-11-07 |  | 0d |  | 280h |
| 37 | 1.2.1.3.5 | Предаване на итерация | milestone | 1d | 2012-11-08 | 2012-11-08 | 36 | 324d | 0d |  |
| 38 | 1.2.1.3.6 | E1 Оценка и отразяване на корекции |  | 30d | 2012-11-09 | 2012-12-20 | 37 | 324d | 0d | 80h |
| 39 | 1.2.1.3.7 | E1 Приемане на итерация | milestone | 1d | 2012-12-21 | 2012-12-21 | 38 | 324d |  |  |
| 40 | 1.2.2 | **Е2 Разработване на модели** |  | 30d | 2012-11-08 | 2012-12-19 | 36 | 0d |  |  |
| 41 | 1.2.2.1 | Дизайн модел на бинес функционалности група 1 (БФГ1) |  | 30d | 2012-11-08 | 2012-12-19 |  | 326d |  |  |
| 42 | 1.2.2.2 | Дизайн модел на бинес функционалности група 2 (БФГ2) |  | 30d | 2012-11-08 | 2012-12-19 |  | 326d |  |  |
| 43 | 1.2.2.3 | Дизайн модел на бинес функционалности група 3 (БФГ3) |  | 30d | 2012-11-08 | 2012-12-19 |  | 326d |  |  |
| 44 | 1.2.2.4 | Предаване на итерация | milestone | 1d | 2012-11-08 | 2012-11-08 |  | 0d |  |  |
| 45 | 1.2.3 | E2 Оценка и отразяване на корекции |  | 30d | 2012-11-09 | 2012-12-20 | 44 | 0d |  | 80h |
| 46 | 1.2.4 | E2 Приемане на итерация | milestone | 1d | 2012-12-21 | 2012-12-21 | 45 | 0d |  |  |
| 47 | 1.3 | **Фаза Изграждане** |  | 98d | 2012-11-09 | 2013-03-26 |  | 31d |  | 1200h |
| 48 | 1.3.1 | **C1 Изграждане на БФГ1** |  | 40d | 2012-11-09 | 2013-01-03 | 44 | 257d |  | 280h |
| 49 | 1.3.1.1 | Разработване на модела на кода на БФГ1 |  | 40d | 2012-11-09 | 2013-01-03 |  | 315d |  |  |
| 50 | 1.3.1.2 | Провеждане на първични тестове на разработените модули от БФГ1 |  | 35d | 2012-11-09 | 2012-12-27 |  | 257d | 0d | 280h |
| 51 | 1.3.1.3 | Предаване на итерация | milestone | 1d | 2012-12-28 | 2012-12-28 | 50 | 257d | 0d |  |
| 52 | 1.3.2 | C1 Отразяване на корекции |  | 30d | 2012-12-31 | 2013-02-08 | 51 | 288d | 0d | 40h |
| 53 | 1.3.3 | C1 Приемане на итерация | milestone | 1d | 2013-02-11 | 2013-02-11 | 52 | 288d |  |  |

| ID | WBS | Task | Type | Duration | Start | Finish | Predecessors | Total slack | Free slack | Constraint | Work |
| --- | --- | --- | --- | --- | --- | --- | --- | --- | --- | --- | --- |
| 54 | 1.3.4 | **C2 Изграждане на БФГ2** |  | 50d | 2012-12-31 | 2013-03-08 | 51 | 257d |  |  | 400h |
| 55 | 1.3.4.1 | Разработване на модела на кода на БФГ2 |  | 50d | 2012-12-31 | 2013-03-08 |  | 269d |  |  |  |
| 56 | 1.3.4.2 | Провеждане на първични тестове на разработените модули от БФГ2 |  | 30d | 2012-12-31 | 2013-02-08 |  | 257d | 0d |  | 400h |
| 57 | 1.3.4.3 | Предаване на итерация | milestone | 1d | 2013-02-11 | 2013-02-11 | 56 | 257d | 0d |  |  |
| 58 | 1.3.5 | C2 Отразяване на корекции |  | 30d | 2013-02-12 | 2013-03-25 | 57 | 257d | 0d |  | 40h |
| 59 | 1.3.6 | C2 Приемане на итерация | milestone | 1d | 2013-03-26 | 2013-03-26 | 58 | 257d |  |  |  |
| 60 | 1.3.7 | **C3 Изграждане на БФГ3** |  | 26d | 2012-12-24 | 2013-01-28 | 46 | 0d |  |  | 400h |
| 61 | 1.3.7.1 | Разработване на модела на кода на БФГ3 |  | 25d | 2012-12-24 | 2013-01-25 |  | 1d |  |  |  |
| 62 | 1.3.7.2 | Провеждане на първични тестове на разработените модули от БФГ3 |  | 25d | 2012-12-24 | 2013-01-25 |  | 0d |  |  | 400h |
| 63 | 1.3.7.3 | Предаване на итерация | milestone | 1d | 2013-01-28 | 2013-01-28 | 62 | 0d |  |  |  |
| 64 | 1.3.8 | C3 Отразяване на корекции |  | 15d | 2013-01-29 | 2013-02-18 | 63 | 282d | 0d |  | 40h |
| 65 | 1.3.9 | C3 Приемане на итерация | milestone | 1d | 2013-02-19 | 2013-02-19 | 64 | 282d |  |  |  |
| 66 | 1.4 | **Фаза Внедряване** |  | 36d | 2013-01-29 | 2013-03-19 |  | 0d |  |  | 480h |
| 67 | 1.4.1 | **Т1 Предаване на модули с БФГ1** |  | 21d | 2013-01-29 | 2013-02-26 | 60 | 0d |  |  | 440h |
| 68 | 1.4.1.1 | Мигриране на данни |  | 5d | 2013-01-29 | 2013-02-04 |  | 293d |  |  | 40h |
| 69 | 1.4.1.2 | Функционални и интегрални тестове |  | 5d | 2013-01-29 | 2013-02-04 |  | 293d |  |  | 40h |
| 70 | 1.4.1.3 | Провеждане на тестове по приемане на функционалността |  | 10d | 2013-01-29 | 2013-02-11 |  | 288d |  |  | 80h |
| 71 | 1.4.1.4 | Провеждане на курсове за обучение на обучители на потребители |  | 15d | 2013-01-29 | 2013-02-18 |  | 283d |  |  | 120h |
| 72 | 1.4.1.5 | Провеждане на курсове за обучение на системни администратори |  | 15d | 2013-01-29 | 2013-02-18 |  | 0d |  |  | 120h |
| 73 | 1.4.1.6 | Пускане в експлоатация |  | 5d | 2013-02-19 | 2013-02-25 | 72 | 0d |  |  | 40h |
| 74 | 1.4.1.7 | Предаване на итерация | milestone | 1d | 2013-02-26 | 2013-02-26 | 73 | 277d |  |  |  |
| 75 | 1.4.2 | Т1 Отразяване на корекции |  | 15d | 2013-02-26 | 2013-03-18 | 73 | 0d |  |  | 40h |
| 76 | 1.4.3 | Т1 Приемане на итерация | milestone | 1d | 2013-03-19 | 2013-03-19 | 75 | 0d |  |  |  |
| 77 | 1.5 | **Гаранционен период** |  | 262d | 2013-03-20 | 2014-03-20 | 76 | 0d |  |  | 2096h |
| 78 | 1.5.1 | Гаранционна поддръжка |  | 261d | 2013-03-20 | 2014-03-19 |  | 0d |  |  | 2088h |
| 79 | 1.5.2 | Приключване на гаранционна поддръжка |  | 1d | 2014-03-20 | 2014-03-20 | 78 | 0d |  | start no earlier than 2009-11-23 | 8h |
