# K11321 "Подобряване на административното обслужване на потребителите чрез надграждане на централните системи на електронното пр

Schedule from MS Project, 2012-06-20 to 2013-05-21.
Сирма ИТТ

## Calendars

- Standard: Mon-Fri 08:00-12:00, 13:00-17:00; Sat-Sun off.

## Resources

| Resource | Rate |
| --- | --- |
| Ръководител на проекта | 30 |
| Старши програмист 2 | 30 |
| Програмист 2 | 30 |
| Тестер | 25 |
| Документор | 20 |
| Преподавател | 20 |
| Бизнес аналитик | 30 |
| Програмист 1 | 30 |
| Старши програмист 1 | 30 |

## Schedule

| ID | WBS | Task | Type | Duration | Start | Finish | Predecessors | Baseline start | Baseline finish | Baseline duration | Total slack | Free slack | Resources | Work | Cost |
| --- | --- | --- | --- | --- | --- | --- | --- | --- | --- | --- | --- | --- | --- | --- | --- |
| 1 | 1 | **ОП1 "Създаване на регистър за електронна идентичност на потребителите"** |  | 240d | 2012-06-20 | 2013-05-21 |  | 2003-09-29 | 2003-09-29 | 1d |  |  |  | 6045.33h | 2,000 |
| 2 | 1.1 | **Фаза Планиране** |  | 25d | 2012-06-20 | 2012-07-24 |  |  |  |  |  |  |  | 1669.33h | 2,000 |
| 3 | 1.1.1 | **I1 Планиране на системата** |  | 24d | 2012-06-20 | 2012-07-23 |  |  |  |  |  |  |  | 1528h | 2,000 |
| 4 | 1.1.1.1 | **Изграждане на механизми за управление** |  | 5d | 2012-06-20 | 2012-06-26 |  |  |  |  |  |  |  | 400h | 2,000 |
| 5 | 1.1.1.1.1 | Уточняване на организационната схема на проекта |  | 3d | 2012-06-20 | 2012-06-22 |  |  |  |  | 1d | 0d | Преподавател; Ръководител на проекта | 80h | 2,000 |
| 6 | 1.1.1.1.2 | Уточняване на процедурите за управление на проекта |  | 4d | 2012-06-20 | 2012-06-25 | 5SS |  |  |  | 1d |  |  | 80h |  |
| 7 | 1.1.1.1.3 | Подготовка на главен план |  | 4d | 2012-06-20 | 2012-06-25 | 5SS |  |  |  | 1d |  |  | 80h |  |
| 8 | 1.1.1.1.4 | Подготовка на план за управление на качеството |  | 4d | 2012-06-20 | 2012-06-25 | 5SS |  |  |  | 1d |  |  | 80h |  |
| 9 | 1.1.1.1.5 | Среща за стартиране на проекта (1 ден в посочения период) |  | 4d | 2012-06-20 | 2012-06-25 | 5SS |  |  |  | 1d |  |  | 80h |  |
| 10 | 1.1.1.2 | **Изграждане на проектната инфраструктура** |  | 24d | 2012-06-20 | 2012-07-23 | 4SS |  |  |  |  |  |  | 800h |  |
| 11 | 1.1.1.2.1 | Доуточняване на съществуващия инфраструктурен модел |  | 24d | 2012-06-20 | 2012-07-23 |  |  |  |  | 0d |  |  | 160h |  |
| 12 | 1.1.1.2.2 | Изграждане на инфраструктурa за проектиране |  | 20d | 2012-06-20 | 2012-07-17 |  |  |  |  | 4d |  |  | 160h |  |
| 13 | 1.1.1.2.3 | Изграждане на инфраструктурa за разработка |  | 20d | 2012-06-20 | 2012-07-17 |  |  |  |  | 4d |  |  | 160h |  |
| 14 | 1.1.1.2.4 | Изграждане на инфраструктурa за тестване |  | 20d | 2012-06-20 | 2012-07-17 |  |  |  |  | 4d |  |  | 160h |  |
| 15 | 1.1.1.2.5 | Изграждане на инфраструктурa за управление на проекта |  | 20d | 2012-06-20 | 2012-07-17 |  |  |  |  | 4d |  |  | 160h |  |
| 16 | 1.1.1.3 | Разширяване на функционалните изисквания |  | 20d | 2012-06-20 | 2012-07-17 | 10SS |  |  |  | 4d |  |  | 160h |  |
| 17 | 1.1.1.4 | Разширяване на нефункционалните изисквания |  | 20d | 2012-06-20 | 2012-07-17 | 10SS |  |  |  | -1d | 0d |  | 160h |  |
| 18 | 1.1.1.5 | Предаване на итерация | milestone | 1d | 2012-07-18 | 2012-07-18 | 17 |  |  |  | -1d | 0d |  | 8h |  |
| 19 | 1.1.2 | I1 Оценка и отразяване на корекции |  | 3d | 2012-07-19 | 2012-07-23 | 18 |  |  |  | 0d |  |  | 141.33h |  |
| 20 | 1.1.3 | I1 Приемане на итерация | milestone | 1d | 2012-07-24 | 2012-07-24 | 19 |  |  |  | 0d |  |  |  |  |
| 21 | 1.2 | **Фаза Проектиране** |  | 73d | 2012-07-18 | 2012-10-26 |  |  |  |  |  |  |  | 1920h |  |
| 22 | 1.2.1 | **E1 Разработване на Аналитичния и Дизайн модела** |  | 72d | 2012-07-18 | 2012-10-25 | 18 |  |  |  |  |  |  | 1840h |  |
| 23 | 1.2.1.1 | **Разработване на Бизнес модел на системата** |  | 17d | 2012-07-18 | 2012-08-09 |  |  |  |  |  |  |  | 280h |  |
| 24 | 1.2.1.1.1 | Уточняване на множеството бизнес процеси в системата |  | 7d | 2012-07-18 | 2012-07-26 |  |  |  |  | 10d |  |  | 80h |  |
| 25 | 1.2.1.1.2 | Доуточняване на модела на данните |  | 7d | 2012-07-18 | 2012-07-26 |  |  |  |  | 10d |  |  | 80h |  |
| 26 | 1.2.1.1.3 | Доуточняване на модела на услугите |  | 8d | 2012-07-18 | 2012-07-27 |  |  |  |  | 0d |  |  | 80h |  |
| 27 | 1.2.1.1.4 | Разработване на софтуерната архитектура |  | 9d | 2012-07-30 | 2012-08-09 | 26 |  |  |  | 0d |  |  | 40h |  |

| ID | WBS | Task | Type | Duration | Start | Finish | Predecessors | Total slack | Free slack | Constraint | Work |
| --- | --- | --- | --- | --- | --- | --- | --- | --- | --- | --- | --- |
| 28 | 1.2.1.2 | **Разработване на архитектурен прототип** |  | 11d | 2012-08-08 | 2012-08-22 | 23 |  |  |  | 360h |
| 29 | 1.2.1.2.1 | Детайлиране на архитектурния прототип |  | 10d | 2012-08-08 | 2012-08-21 |  | 1d |  |  | 120h |
| 30 | 1.2.1.2.2 | Изграждане на архитектурния прототип |  | 10d | 2012-08-08 | 2012-08-21 |  | 1d |  |  | 120h |
| 31 | 1.2.1.2.3 | Предаване на архитектурния прототип |  | 10d | 2012-08-08 | 2012-08-21 |  | 1d |  |  | 120h |
| 32 | 1.2.1.3 | **Разработване на Тестов модел на системата** |  | 47d | 2012-08-22 | 2012-10-25 | 28 |  |  |  | 1200h |
| 33 | 1.2.1.3.1 | Подготовка на процедури за тестване |  | 22d | 2012-08-22 | 2012-09-20 |  | 25d |  |  | 280h |
| 34 | 1.2.1.3.2 | Разработване на процедури за приемане |  | 22d | 2012-08-22 | 2012-09-20 |  | 25d |  |  | 280h |
| 35 | 1.2.1.3.3 | Разработване на тестов план |  | 22d | 2012-08-22 | 2012-09-20 |  | 25d |  |  | 280h |
| 36 | 1.2.1.3.4 | Разработване на тестов модел |  | 23d | 2012-08-22 | 2012-09-21 |  | -1d | 0d |  | 280h |
| 37 | 1.2.1.3.5 | Предаване на итерация | milestone | 1d | 2012-09-24 | 2012-09-24 | 36 | 0d |  |  |  |
| 38 | 1.2.1.3.6 | E1 Оценка и отразяване на корекции |  | 22d | 2012-09-25 | 2012-10-24 | 37 | 0d |  |  | 80h |
| 39 | 1.2.1.3.7 | E1 Приемане на итерация | milestone | 1d | 2012-10-25 | 2012-10-25 | 38 | 0d |  |  |  |
| 40 | 1.2.2 | **Е2 Разработване на модели** |  | 23d | 2012-09-21 | 2012-10-23 | 36 |  |  |  |  |
| 41 | 1.2.2.1 | Дизайн модел на бинес функционалности група 1 (БФГ1) |  | 23d | 2012-09-21 | 2012-10-23 |  | 0d |  |  |  |
| 42 | 1.2.2.2 | Дизайн модел на бинес функционалности група 2 (БФГ2) |  | 23d | 2012-09-21 | 2012-10-23 |  | 0d |  |  |  |
| 43 | 1.2.2.3 | Дизайн модел на бинес функционалности група 3 (БФГ3) |  | 23d | 2012-09-21 | 2012-10-23 |  | 0d |  |  |  |
| 44 | 1.2.2.4 | Предаване на итерация | milestone | 1d | 2012-09-21 | 2012-09-21 |  | 0d |  |  |  |
| 45 | 1.2.3 | E2 Оценка и отразяване на корекции |  | 23d | 2012-09-24 | 2012-10-24 | 44 | 2d |  |  | 80h |
| 46 | 1.2.4 | E2 Приемане на итерация | milestone | 1d | 2012-10-24 | 2012-10-24 |  | -1d | 0d | start no earlier than 2012-10-24 |  |
| 47 | 1.3 | **Фаза Изграждане** |  | 120d | 2012-09-24 | 2013-03-08 |  |  |  |  | 1200h |
| 48 | 1.3.1 | **C1 Изграждане на БФГ1** |  | 70d | 2012-09-24 | 2012-12-28 | 44 |  |  |  | 280h |
| 49 | 1.3.1.1 | Разработване на модела на кода на БФГ1 |  | 70d | 2012-09-24 | 2012-12-28 |  | 0d |  |  |  |
| 50 | 1.3.1.2 | Провеждане на първични тестове на разработените модули от БФГ1 |  | 60d | 2012-09-24 | 2012-12-14 |  | 1d | 0d |  | 280h |
| 51 | 1.3.1.3 | Предаване на итерация | milestone | 1d | 2012-12-17 | 2012-12-17 | 50 | 1d | 0d |  |  |
| 52 | 1.3.2 | C1 Отразяване на корекции |  | 30d | 2012-12-18 | 2013-01-28 | 51 | 28d | 0d |  | 40h |
| 53 | 1.3.3 | C1 Приемане на итерация | milestone | 1d | 2013-01-29 | 2013-01-29 | 52 | 28d |  |  |  |

| ID | WBS | Task | Type | Duration | Start | Finish | Predecessors | Total slack | Free slack | Constraint | Work |
| --- | --- | --- | --- | --- | --- | --- | --- | --- | --- | --- | --- |
| 54 | 1.3.4 | **C2 Изграждане на БФГ2** |  | 56d | 2012-12-19 | 2013-03-06 | 51 |  |  |  | 400h |
| 55 | 1.3.4.1 | Разработване на модела на кода на БФГ2 |  | 56d | 2012-12-19 | 2013-03-06 |  | 0d |  |  |  |
| 56 | 1.3.4.2 | Провеждане на първични тестове на разработените модули от БФГ2 |  | 30d | 2012-12-19 | 2013-01-29 |  | 0d |  |  | 400h |
| 57 | 1.3.4.3 | Предаване на итерация | milestone | 1d | 2013-01-30 | 2013-01-30 | 56 | 0d |  |  |  |
| 58 | 1.3.5 | C2 Отразяване на корекции |  | 26d | 2013-01-31 | 2013-03-07 | 57 | 0d |  |  | 40h |
| 59 | 1.3.6 | C2 Приемане на итерация | milestone | 1d | 2013-03-08 | 2013-03-08 | 58 | 0d |  |  |  |
| 60 | 1.3.7 | **C3 Изграждане на БФГ3** |  | 30d | 2012-10-24 | 2012-12-04 | 46 |  |  |  | 400h |
| 61 | 1.3.7.1 | Разработване на модела на кода на БФГ3 |  | 30d | 2012-10-24 | 2012-12-04 |  | 0d |  |  |  |
| 62 | 1.3.7.2 | Провеждане на първични тестове на разработените модули от БФГ3 |  | 27d | 2012-10-24 | 2012-11-29 |  | 2d | 0d |  | 400h |
| 63 | 1.3.7.3 | Предаване на итерация | milestone | 1d | 2012-11-30 | 2012-11-30 | 62 | 2d | 0d |  |  |
| 64 | 1.3.8 | C3 Отразяване на корекции |  | 15d | 2012-12-03 | 2012-12-21 | 63 | 54d | 0d |  | 40h |
| 65 | 1.3.9 | C3 Приемане на итерация | milestone | 1d | 2012-12-24 | 2012-12-24 | 64 | 54d |  |  |  |
| 66 | 1.4 | **Фаза Внедряване** |  | 24d | 2012-12-05 | 2013-01-07 |  |  |  |  | 480h |
| 67 | 1.4.1 | **Т1 Предаване на модули с БФГ1** |  | 12d | 2012-12-05 | 2012-12-20 | 60 |  |  |  | 440h |
| 68 | 1.4.1.1 | Мигриране на данни |  | 3d | 2012-12-05 | 2012-12-07 |  | 9d |  |  | 40h |
| 69 | 1.4.1.2 | Функционални и интегрални тестове |  | 3d | 2012-12-05 | 2012-12-07 |  | 9d |  |  | 40h |
| 70 | 1.4.1.3 | Провеждане на тестове по приемане на функционалността |  | 5d | 2012-12-05 | 2012-12-11 |  | 7d |  |  | 80h |
| 71 | 1.4.1.4 | Провеждане на курсове за обучение на обучители на потребители |  | 4d | 2012-12-05 | 2012-12-10 |  | 8d |  |  | 120h |
| 72 | 1.4.1.5 | Провеждане на курсове за обучение на системни администратори |  | 7d | 2012-12-05 | 2012-12-13 |  | 0d |  |  | 120h |
| 73 | 1.4.1.6 | Пускане в експлоатация |  | 4d | 2012-12-14 | 2012-12-19 | 72 | 0d |  |  | 40h |
| 74 | 1.4.1.7 | Предаване на итерация | milestone | 1d | 2012-12-20 | 2012-12-20 |  | 108d |  | start no earlier than 2012-12-20 |  |
| 75 | 1.4.2 | Т1 Отразяване на корекции |  | 13d | 2012-12-20 | 2013-01-07 | 73 | 0d |  |  | 40h |
| 76 | 1.4.3 | Т1 Приемане на итерация | milestone | 1d | 2013-01-07 | 2013-01-07 |  | -1d | 0d | start no earlier than 2013-01-07 |  |
| 77 | 1.5 | **Гаранционен период** |  | 97d | 2013-01-07 | 2013-05-21 | 76 |  |  |  | 776h |
| 78 | 1.5.1 | Гаранционна поддръжка |  | 96d | 2013-01-07 | 2013-05-20 |  | 0d |  |  | 768h |
| 79 | 1.5.2 | Приключване на гаранционна поддръжка |  | 1d | 2013-05-21 | 2013-05-21 | 78 | 0d |  | start no earlier than 2009-11-23 | 8h |
