# Общинска система

Schedule from MS Project, 2012-06-20 to 2013-04-22.
Сирма ИТТ

## Calendars

- Standard: Mon-Fri 08:00-12:00, 13:00-17:00; Sat-Sun off. Exceptions (off unless hours are given): 2013-02-02 08:00-12:00, 13:00-17:00.

## Resources

| Resource | Rate |
| --- | --- |
| Ръководител на проекта | 30 |
| Старши програмист 2 | 30 |
| Програмист 2 | 30 |
| Тестер | 25 |
| Документор | 20 |
| Преподавател | 20 |
| Бизнес аналитик | 30 |
| Програмист 1 | 30 |
| Старши програмист 1 | 30 |

## Schedule

| ID | WBS | Task | Type | Duration | Start | Finish | Predecessors | Baseline start | Baseline finish | Baseline duration | Total slack | Free slack | Resources | Work | Cost |
| --- | --- | --- | --- | --- | --- | --- | --- | --- | --- | --- | --- | --- | --- | --- | --- |
| 1 | 1 | **ОП1 "Създаване на информационна система за община"** |  | 220d | 2012-06-20 | 2013-04-22 |  | 2003-09-29 | 2003-09-29 | 1d | -1d | 0d |  | 5469.33h | 2,000 |
| 2 | 1.1 | **Фаза Планиране** |  | 20d | 2012-06-20 | 2012-07-17 |  |  |  |  |  |  |  | 1589.33h | 2,000 |
| 3 | 1.1.1 | **I1 Планиране на системата** |  | 9d | 2012-06-20 | 2012-07-02 |  |  |  |  |  |  |  | 1448h | 2,000 |
| 4 | 1.1.1.1 | **Изграждане на механизми за управление** |  | 1d | 2012-06-20 | 2012-06-20 |  |  |  |  |  |  |  | 320h | 2,000 |
| 5 | 1.1.1.1.1 | Уточняване на организационната схема на проекта |  | 1d | 2012-06-20 | 2012-06-20 |  |  |  |  | -1d | 0d | Преподавател; Ръководител на проекта | 80h | 2,000 |
| 6 | 1.1.1.1.2 | Уточняване на процедурите за управление на проекта |  | 2d | 2012-06-20 | 2012-06-21 | 5SS |  |  |  | -1d | 0d |  | 80h |  |
| 7 | 1.1.1.1.3 | Подготовка на главен план |  | 1d | 2012-06-20 | 2012-06-20 | 5SS |  |  |  | 0d |  |  | 80h |  |
| 8 | 1.1.1.1.4 | Подготовка на план за управление на качеството |  | 1d | 2012-06-20 | 2012-06-20 | 5SS |  |  |  | 0d |  |  | 80h |  |
| 9 | 1.1.1.2 | **Изграждане на проектната инфраструктура** |  | 9d | 2012-06-20 | 2012-07-02 | 4SS |  |  |  |  |  |  | 800h |  |
| 10 | 1.1.1.2.1 | Доуточняване на съществуващия инфраструктурен модел |  | 9d | 2012-06-20 | 2012-07-02 |  |  |  |  | 0d |  |  | 160h |  |
| 11 | 1.1.1.2.2 | Изграждане на инфраструктурa за проектиране |  | 9d | 2012-06-20 | 2012-07-02 |  |  |  |  | 0d |  |  | 160h |  |
| 12 | 1.1.1.2.3 | Изграждане на инфраструктурa за разработка |  | 9d | 2012-06-20 | 2012-07-02 |  |  |  |  | 0d |  |  | 160h |  |
| 13 | 1.1.1.2.4 | Изграждане на инфраструктурa за тестване |  | 9d | 2012-06-20 | 2012-07-02 |  |  |  |  | 0d |  |  | 160h |  |
| 14 | 1.1.1.2.5 | Изграждане на инфраструктурa за управление на проекта |  | 9d | 2012-06-20 | 2012-07-02 |  |  |  |  | 0d |  |  | 160h |  |
| 15 | 1.1.1.3 | Разширяване на функционалните изисквания |  | 1d | 2012-06-20 | 2012-06-20 | 9SS |  |  |  | 8d |  |  | 160h |  |
| 16 | 1.1.1.4 | Разширяване на нефункционалните изисквания |  | 1d | 2012-06-20 | 2012-06-20 | 9SS |  |  |  | -52d | 0d |  | 160h |  |
| 17 | 1.1.1.5 | Предаване на итерация | milestone | 1d | 2012-06-21 | 2012-06-21 | 16 |  |  |  | 0d |  |  | 8h |  |
| 18 | 1.1.2 | I1 Оценка и отразяване на корекции |  | 17d | 2012-06-22 | 2012-07-16 | 17 |  |  |  | 0d |  |  | 141.33h |  |
| 19 | 1.1.3 | I1 Приемане на итерация | milestone | 1d | 2012-07-17 | 2012-07-17 | 18 |  |  |  | 0d |  |  |  |  |
| 20 | 1.2 | **Фаза Проектиране** |  | 70d | 2012-07-18 | 2012-10-23 |  |  |  |  |  |  |  | 2240h |  |
| 21 | 1.2.1 | **E1 Определяне на бизнес областите и категоризиране на функционалните и нефункционалните изисквания** |  | 20d | 2012-07-18 | 2012-08-14 | 17 |  |  |  |  |  |  | 1520h |  |
| 22 | 1.2.1.1 | **Разработване на Бизнес модел на системата** |  | 5d | 2012-07-18 | 2012-07-24 |  |  |  |  |  |  |  | 240h |  |
| 23 | 1.2.1.1.1 | Уточняване на множеството бизнес процеси в системата |  | 1d | 2012-07-18 | 2012-07-18 |  |  |  |  | 0d |  |  | 80h |  |
| 24 | 1.2.1.1.2 | Доуточняване на модела на данните |  | 1d | 2012-07-19 | 2012-07-19 | 23 |  |  |  | 0d |  |  | 80h |  |
| 25 | 1.2.1.1.3 | Доуточняване на модела на услугите |  | 3d | 2012-07-20 | 2012-07-24 | 24 |  |  |  | 0d |  |  | 80h |  |

| ID | WBS | Task | Type | Duration | Start | Finish | Predecessors | Total slack | Free slack | Constraint | Work |
| --- | --- | --- | --- | --- | --- | --- | --- | --- | --- | --- | --- |
| 26 | 1.2.1.2 | **Разработване на функционалните изисквания** |  | 15d | 2012-07-25 | 2012-08-14 | 22 | 0d |  |  | 640h |
| 27 | 1.2.1.2.1 | Подготовка на функционалните изисквания |  | 7d | 2012-07-25 | 2012-08-02 |  | 8d |  |  | 280h |
| 28 | 1.2.1.2.2 | Разработване на функционалните изисквания |  | 8d | 2012-07-25 | 2012-08-03 |  | 7d |  |  | 280h |
| 29 | 1.2.1.2.3 | Предаване на итерация | milestone | 1d | 2012-07-25 | 2012-07-25 |  | 0d |  |  |  |
| 30 | 1.2.1.2.4 | E1 Оценка и отразяване на корекции |  | 13d | 2012-07-26 | 2012-08-13 | 29 | 0d |  |  | 80h |
| 31 | 1.2.1.2.5 | E1 Приемане на итерация | milestone | 1d | 2012-08-14 | 2012-08-14 | 30 | 0d |  |  |  |
| 32 | 1.2.1.3 | **Разработване на нефункционалните изисквания** |  | 15d | 2012-07-25 | 2012-08-14 | 26SS |  |  |  | 640h |
| 33 | 1.2.1.3.1 | Подготовка на нефункционалните изисквания |  | 7d | 2012-07-25 | 2012-08-02 |  | 8d |  |  | 280h |
| 34 | 1.2.1.3.2 | Разработване на нефункционалните изисквания |  | 8d | 2012-07-25 | 2012-08-03 |  | 7d |  |  | 280h |
| 35 | 1.2.1.3.3 | Предаване на итерация | milestone | 1d | 2012-07-25 | 2012-07-25 |  | 0d |  |  |  |
| 36 | 1.2.1.3.4 | E1 Оценка и отразяване на корекции |  | 13d | 2012-07-26 | 2012-08-13 | 35 | 0d |  |  | 80h |
| 37 | 1.2.1.3.5 | E1 Приемане на итерация | milestone | 1d | 2012-08-14 | 2012-08-14 | 36 | 0d |  |  |  |
| 38 | 1.2.2 | **Е2 Описание на бизнес процесите, индефициране на първичните инф. обекти и определяне на услугите** |  | 25d | 2012-08-16 | 2012-09-19 |  |  |  |  | 80h |
| 39 | 1.2.2.1 | Описание на бизнес процесите |  | 10d | 2012-08-16 | 2012-08-29 |  | 5d | 0d |  |  |
| 40 | 1.2.2.2 | индефициране на първичните инф. обекти |  | 10d | 2012-07-30 | 2012-08-10 |  | 182d |  | start no earlier than 2012-07-29 |  |
| 41 | 1.2.2.3 | определяне на услугите |  | 10d | 2012-08-30 | 2012-09-12 | 39 | 5d |  |  |  |
| 42 | 1.2.2.4 | Предаване на итерация | milestone | 1d | 2012-08-16 | 2012-08-16 |  | 24d |  |  |  |
| 43 | 1.2.2.5 | E2 Оценка и отразяване на корекции |  | 23d | 2012-08-16 | 2012-09-17 |  | 1d | 0d |  | 80h |
| 44 | 1.2.2.6 | E2 Приемане на итерация | milestone | 1d | 2012-09-18 | 2012-09-18 | 43 | 1d |  |  |  |
| 45 | 1.2.3 | **E3 Разработване на Софтуерната архитектура и дизайн моделите на системата** |  | 25d | 2012-09-19 | 2012-10-23 |  |  |  |  | 640h |
| 46 | 1.2.3.1 | Разработване на Софтуерната архитектура |  | 15d | 2012-09-19 | 2012-10-09 |  | 0d |  |  | 280h |
| 47 | 1.2.3.2 | Разработване на дизайн моделите |  | 10d | 2012-10-10 | 2012-10-23 | 46 | 0d |  |  | 280h |
| 48 | 1.2.3.3 | Предаване на итерация | milestone | 1d | 2012-09-19 | 2012-09-19 |  | 0d |  |  |  |
| 49 | 1.2.3.4 | E1 Оценка и отразяване на корекции |  | 23d | 2012-09-20 | 2012-10-22 | 48 | 0d |  |  | 80h |
| 50 | 1.2.3.5 | E1 Приемане на итерация | milestone | 1d | 2012-10-23 | 2012-10-23 | 49 | 0d |  |  |  |

| ID | WBS | Task | Type | Duration | Start | Finish | Predecessors | Total slack | Free slack | Constraint | Work |
| --- | --- | --- | --- | --- | --- | --- | --- | --- | --- | --- | --- |
| 51 | 1.3 | **Фаза Изграждане** |  | 110d | 2012-10-24 | 2013-03-25 |  |  |  |  | 1160h |
| 52 | 1.3.1 | **C1 Изграждане на БФГ1** |  | 40d | 2012-10-24 | 2012-12-18 | 42 | 70d |  |  | 320h |
| 53 | 1.3.1.1 | Разработване на модела на кода на БФГ1 |  | 40d | 2012-10-24 | 2012-12-18 |  | 71d |  |  |  |
| 54 | 1.3.1.2 | Провеждане на първични тестове на разработените модули от БФГ1 |  | 35d | 2012-10-24 | 2012-12-11 |  | 76d |  |  | 280h |
| 55 | 1.3.1.3 | Предаване на итерация | milestone | 1d | 2012-10-24 | 2012-10-24 |  | 71d | 0d | start no earlier than 2012-10-24 |  |
| 56 | 1.3.1.4 | C1 Отразяване на корекции |  | 38d | 2012-10-25 | 2012-12-17 | 55 | 70d | 0d | start no earlier than 2012-10-25 | 40h |
| 57 | 1.3.1.5 | C1 Приемане на итерация | milestone | 1d | 2012-12-18 | 2012-12-18 | 56 | 70d |  |  |  |
| 58 | 1.3.2 | **C2 Изграждане на БФГ2** |  | 35d | 2012-12-19 | 2013-02-04 |  |  |  |  | 440h |
| 59 | 1.3.2.1 | Разработване на модела на кода на БФГ2 |  | 35d | 2012-12-19 | 2013-02-04 |  | 0d |  |  |  |
| 60 | 1.3.2.2 | Провеждане на първични тестове на разработените модули от БФГ2 |  | 30d | 2012-12-19 | 2013-01-29 |  | 5d |  |  | 400h |
| 61 | 1.3.2.3 | Предаване на итерация | milestone | 1d | 2013-01-30 | 2013-01-30 |  | 337d |  | start no earlier than 2013-01-30 |  |
| 62 | 1.3.2.4 | C2 Отразяване на корекции |  | 30d | 2012-12-20 | 2013-01-30 |  | 336d | 0d | start no earlier than 2012-12-20 | 40h |
| 63 | 1.3.2.5 | C2 Приемане на итерация | milestone | 1d | 2013-01-31 | 2013-01-31 | 62 | 58d |  | finish no earlier than 2013-01-31 |  |
| 64 | 1.3.3 | **C3 Изграждане на БФГ3** |  | 35d | 2013-02-05 | 2013-03-25 |  |  |  |  | 400h |
| 65 | 1.3.3.1 | Разработване на модела на кода на БФГ3 |  | 25d | 2013-02-05 | 2013-03-11 |  | 10d |  |  |  |
| 66 | 1.3.3.2 | Провеждане на първични тестове на разработените модули от БФГ3 |  | 25d | 2013-02-15 | 2013-03-21 |  | 300d |  | start no earlier than 2013-02-15 | 400h |
| 67 | 1.3.3.3 | Предаване на итерация | milestone | 1d | 2013-03-19 | 2013-03-19 |  | 302d | 3d | finish no earlier than 2013-03-19 |  |
| 68 | 1.3.3.4 | C3 Отразяване на корекции |  | 32d | 2013-02-06 | 2013-03-21 |  | 300d |  | finish no earlier than 2013-03-21 |  |
| 69 | 1.3.3.5 | C3 Приемане на итерация | milestone | 0d | 2013-03-25 | 2013-03-25 | 67 | 21d |  | start no earlier than 2013-03-25 |  |
| 70 | 1.4 | **Фаза Внедряване** |  | 20d | 2013-03-26 | 2013-04-22 |  |  |  |  | 480h |
| 71 | 1.4.1 | **Т1 Предаване на модули с БФГ1** |  | 19d | 2013-03-26 | 2013-04-19 | 64 |  |  |  | 440h |
| 72 | 1.4.1.1 | Мигриране на данни |  | 5d | 2013-03-26 | 2013-04-01 |  | 14d |  |  | 40h |
| 73 | 1.4.1.2 | Функционални и интегрални тестове |  | 5d | 2013-03-26 | 2013-04-01 |  | 14d |  |  | 40h |
| 74 | 1.4.1.3 | Провеждане на тестове по приемане на функционалността |  | 10d | 2013-03-26 | 2013-04-08 |  | 9d |  |  | 80h |
| 75 | 1.4.1.4 | Провеждане на курсове за обучение на обучители на потребители |  | 15d | 2013-03-26 | 2013-04-15 |  | 4d |  |  | 120h |
| 76 | 1.4.1.5 | Провеждане на курсове за обучение на системни администратори |  | 15d | 2013-03-26 | 2013-04-15 |  | 4d |  |  | 120h |
| 77 | 1.4.1.6 | Пускане в експлоатация |  | 4d | 2013-04-15 | 2013-04-18 |  | 0d |  | start no earlier than 2013-04-15 | 40h |
| 78 | 1.4.1.7 | Предаване на итерация | milestone | 1d | 2013-04-19 | 2013-04-19 | 77 | 0d |  |  |  |
| 79 | 1.4.2 | Т1 Отразяване на корекции |  | 15d | 2013-03-26 | 2013-04-15 |  | 5d |  | start no earlier than 2013-03-26 | 40h |
| 80 | 1.4.3 | Т1 Приемане на итерация | milestone | 1d | 2013-04-22 | 2013-04-22 |  | 0d |  | start no earlier than 2013-04-22 |  |
