# Единна деловодна система на държавна администрация

Schedule from MS Project, 2013-09-28 to 2014-01-17, costs in лв..
Екип 1

## Calendars

- Standard: Mon-Fri 08:00-12:00, 13:00-17:00; Sat-Sun off.

## Resources

| Resource | Group | Rate |
| --- | --- | --- |
| Иво Русев | PM, SA | 375 |
| Виктор Костадинов | Dev | 275 |
| Станислав Стефанов | Dev | 275 |
| Бояна Димова | BA, QA | 325 |
| Искрен Папазов | QA, BA | 325 |
| Венцислав Маринов | DEV, SysA | 250 |
| Антоний Кунчев | DEV, BA | 300 |
| Иван Станев | Аssignor |  |
| Мирослав Червенски | Аssignor |  |
| Ивайло Каменаров | Аssignor |  |

## Schedule

| ID | WBS | Task | Type | Duration | Start | Finish | Predecessors | Total slack | Free slack | Constraint | Resources | Work | Cost |
| --- | --- | --- | --- | --- | --- | --- | --- | --- | --- | --- | --- | --- | --- |
| 1 | 1 | **Фаза Планиране** |  | 7.12d | 2013-09-28 | 2013-10-06 |  |  |  |  |  | 26.02h | 7,679.69 |
| 2 | 1.1 | **I1 Планиране на системата** |  | 6.88d | 2013-09-28 | 2013-10-06 |  |  |  |  |  | 22.02h | 6,557.87 |
| 3 | 1.1.1 | Формиране на екипите | manual | 1d | 2013-09-28 | 2013-09-28 |  |  |  | start no earlier than 2013-09-28 | Иво Русев; Иван Станев [36%] | 1h | 275.73 |
| 4 | 1.1.2 | Задаване на практическите задачи | manual | 1d | 2013-09-28 | 2013-09-28 |  |  |  | start no earlier than 2013-09-28 | Иван Станев [36%] | 0.85h |  |
| 5 | 1.1.3 | Дефиниране на роли и отговорности | manual | 2d | 2013-09-28 | 2013-09-29 |  |  |  | start no earlier than 2013-09-28 | Антоний Кунчев [12.5%]; Бояна Димова [12.5%]; Виктор Костадинов [12.5%]; Венцислав Маринов [12.5%]; Искрен Папазов [12.5%]; Иво Русев [12.5%]; Станислав Стефанов [12.5%] | 2h | 607.14 |
| 6 | 1.1.4 | Дефиниране на потребителските изисквания | manual | 2d | 2013-09-28 | 2013-09-29 |  |  |  | start no earlier than 2013-09-28 | Антоний Кунчев [18.8%]; Бояна Димова [18.8%]; Искрен Папазов [18.8%] | 3h | 900 |
| 7 | 1.1.5 | Разработване на списък с рискове |  | 2d | 2013-09-29 | 2013-09-30 |  | 77d |  | start no earlier than 2013-09-29 | Иво Русев [6.2%] | 1h | 375 |
| 8 | 1.1.6 | Разработване на главен план за изпълнение на проекта |  | 4d | 2013-10-01 | 2013-10-05 |  | 73.88d |  | start no earlier than 2013-10-01 | Антоний Кунчев [3.1%]; Иво Русев [3.1%] | 2h | 675 |
| 9 | 1.1.7 | Разработване визия на проекта |  | 2d | 2013-09-30 | 2013-10-01 |  | 76.88d |  | start no earlier than 2013-09-30 | Антоний Кунчев [25%] | 4h | 1,200 |
| 10 | 1.1.8 | План за управление на качеството |  | 3d | 2013-09-28 | 2013-09-30 |  | 1d | 0.12d |  | Антоний Кунчев [6.2%]; Искрен Папазов [6.2%] | 3h | 937.5 |
| 11 | 1.1.9 | Разработване на начална версия на речник |  | 2d | 2013-10-01 | 2013-10-03 | 10 | 1d |  |  | Искрен Папазов [18.8%] | 3h | 975 |
| 12 | 1.1.10 | Конвенция за писане на код |  | 0.02d | 2013-10-03 | 2013-10-03 |  | 76.98d |  | start no earlier than 2013-10-03 | Иво Русев | 0.17h | 62.5 |
| 13 | 1.1.11 | Разработване на модел на инфраструктурата |  | 4d | 2013-09-29 | 2013-10-03 |  | 75d |  | start no earlier than 2013-09-29 | Станислав Стефанов [6.2%] | 2h | 550 |
| 14 | 1.2 | Предаване на итерация | manual | 1d | 2013-10-05 | 2013-10-05 |  |  |  | start no earlier than 2013-10-05 | Антоний Кунчев [25%]; Бояна Димова [25%]; Виктор Костадинов [25%]; Венцислав Маринов [25%]; Искрен Папазов [25%]; Иво Русев [25%]; Иван Станев [25%]; Станислав Стефанов [25%] | 2h | 531.25 |
| 15 | 1.3 | I1 Оценка и отразяване на корекции | manual | 1d | 2013-10-06 | 2013-10-06 |  |  |  | start no earlier than 2013-10-06 | Антоний Кунчев [12.5%]; Бояна Димова [12.5%]; Виктор Костадинов [12.5%]; Венцислав Маринов [12.5%]; Искрен Папазов [12.5%]; Иво Русев [12.5%]; Иван Станев [12.5%]; Станислав Стефанов [12.5%] | 1h | 325 |
| 16 | 1.4 | I1 Приемане на итерация | manual | 0.04d | 2013-10-06 | 2013-10-06 |  |  |  | start no earlier than 2013-10-06 | Антоний Кунчев; Бояна Димова; Виктор Костадинов; Венцислав Маринов; Искрен Папазов; Иво Русев; Иван Станев [36%]; Станислав Стефанов [36%] | 1h | 265.57 |
| 17 | 2 | **Фаза Детайлизиране** |  | 20.88d | 2013-10-07 | 2013-11-04 |  |  |  |  |  | 54.47h | 15,612.29 |
| 18 | 2.1 | **E1 Разработване на Модели на системата** |  | 10.88d | 2013-10-07 | 2013-10-20 |  |  |  |  |  | 10.74h | 2,955.36 |
| 19 | 2.1.1 | Ревизия на главния план на проекта | manual | 6d | 2013-10-07 | 2013-10-12 |  |  |  | start no earlier than 2013-10-07 | Антоний Кунчев [0.5%]; Иван Станев [0.5%] | 2h | 300 |
| 20 | 2.1.2 | Допълване на речника |  | 9d | 2013-10-07 | 2013-10-19 |  | 64d |  | finish no earlier than 2013-10-19 | Антоний Кунчев [0.2%]; Бояна Димова [0.2%]; Виктор Костадинов [0.2%]; Венцислав Маринов [0.2%]; Искрен Папазов [0.2%]; Иво Русев [0.2%]; Станислав Стефанов [0.2%] | 1.17h | 354.17 |
| 21 | 2.1.3 | Ревизия на списък с рискове |  | 9d | 2013-10-08 | 2013-10-19 |  | 63.88d |  | start no earlier than 2013-10-08 | Иво Русев [1.6%] | 1.12h | 421.88 |
| 22 | 2.1.4 | Ревизия на плана за управление на качеството |  | 2d | 2013-10-08 | 2013-10-10 |  | 65d | 0.12d | start no earlier than 2013-10-08 | Антоний Кунчев [1.8%]; Искрен Папазов [1.8%] | 0.58h | 181.82 |
| 23 | 2.1.5 | Завършване на визия на проекта |  | 2d | 2013-10-14 | 2013-10-15 |  | 66.88d |  | start no earlier than 2013-10-14 | Антоний Кунчев [4.2%] | 0.67h | 200 |
| 24 | 2.1.6 | Ревизия на модела на инфраструктурата |  | 3d | 2013-10-11 | 2013-10-13 |  | 66.88d |  | start no earlier than 2013-10-11 | Станислав Стефанов [4.2%] | 1h | 275 |
| 25 | 2.1.7 | Разработване на спецификация на изискванията |  | 3d | 2013-10-11 | 2013-10-13 | 22 | 65.88d | 1d | start no earlier than 2013-10-07 | Антоний Кунчев [5%] | 1.2h | 360 |
| 26 | 2.1.8 | Разработване на модел на данните | manual | 4d | 2013-10-15 | 2013-10-18 | 25 |  |  | start no earlier than 2013-10-11 | Антоний Кунчев [1.8%]; Виктор Костадинов [1.8%] | 3h | 862.5 |
| 27 | 2.2 | Предаване на итерация | manual | 1d | 2013-10-19 | 2013-10-19 |  |  |  | start no earlier than 2013-10-19 | Антоний Кунчев [25%]; Бояна Димова [25%]; Виктор Костадинов [25%]; Венцислав Маринов [25%]; Искрен Папазов [25%]; Иво Русев [25%]; Мирослав Червенски [25%]; Станислав Стефанов [25%] | 3h | 796.88 |
| 28 | 2.3 | Е1 Оценка и отразяване на корекции | manual | 1d | 2013-10-20 | 2013-10-20 | 27 |  |  | start no earlier than 2013-10-20 | Антоний Кунчев [12.5%]; Бояна Димова [12.5%]; Виктор Костадинов [12.5%]; Венцислав Маринов [12.5%]; Искрен Папазов [12.5%]; Иво Русев [12.5%]; Мирослав Червенски [12.5%]; Станислав Стефанов [12.5%] | 2h | 531.25 |
| 29 | 2.4 | Е1 Приемане на итерация | manual | 1d | 2013-10-20 | 2013-10-20 | 27 |  |  | start no earlier than 2013-10-20 | Антоний Кунчев [12.5%]; Бояна Димова [12.5%]; Виктор Костадинов [12.5%]; Венцислав Маринов [12.5%]; Искрен Папазов [12.5%]; Иво Русев [12.5%]; Мирослав Червенски [12.5%]; Станислав Стефанов [12.5%] | 2h | 531.25 |

| ID | WBS | Task | Type | Duration | Start | Finish | Predecessors | Total slack | Free slack | Constraint | Resources | Work | Cost |
| --- | --- | --- | --- | --- | --- | --- | --- | --- | --- | --- | --- | --- | --- |
| 30 | 2.5 | **E2 Разработване на Модели на системата** |  | 11d | 2013-10-21 | 2013-11-03 |  |  |  |  |  | 30.73h | 9,198.5 |
| 31 | 2.5.1 | Ревизия на главния план на проекта |  | 1d | 2013-10-21 | 2013-10-21 |  | 9d |  |  | Иво Русев [0.5%]; Антоний Кунчев [12%] | 1h | 303 |
| 32 | 2.5.2 | Ревизия на плана за управление на качеството |  | 1d | 2013-10-21 | 2013-10-21 |  | 63.75d |  | start no earlier than 2013-10-21 | Искрен Папазов [12.5%] | 1h | 325 |
| 33 | 2.5.3 | Ревизия на списъка с рискове |  | 2d | 2013-10-23 | 2013-10-25 |  | 60d |  | start no earlier than 2013-10-23 | Иво Русев [2.5%] | 0.4h | 150 |
| 34 | 2.5.4 | Ревизия на спецификацията на изискванията |  | 2d | 2013-10-22 | 2013-10-23 |  | 60.88d |  | start no earlier than 2013-10-22 | Антоний Кунчев [6.2%] | 1h | 300 |
| 35 | 2.5.5 | Разработване на дизайн модел на системата |  | 3.5d | 2013-10-22 | 2013-10-26 |  | 2d | 0d | start no earlier than 2013-10-22 | Антоний Кунчев [3.6%]; Виктор Костадинов [3.6%]; Иво Русев [3.6%] | 3h | 950 |
| 36 | 2.5.6 | Разработване на софтуерна архитектура |  | 3d | 2013-10-26 | 2013-10-29 | 35 | 2d |  |  | Виктор Костадинов [8.3%]; Иво Русев [8.3%] | 4h | 1,300 |
| 37 | 2.5.7 | Разработване на план за тестване |  | 3d | 2013-10-21 | 2013-10-23 |  | 4d | 1.12d |  | Бояна Димова [8.3%]; Венцислав Маринов [8.3%] | 4h | 1,150 |
| 38 | 2.5.8 | Разработване на тестов модел |  | 3d | 2013-10-25 | 2013-10-27 | 37 | 2.88d | 0.12d |  | Бояна Димова [1.2%]; Искрен Папазов [1.2%]; Венцислав Маринов [10%] | 3h | 795 |
| 39 | 2.5.9 | Изготвяне на резултати от тестване |  | 2d | 2013-10-28 | 2013-10-29 | 38 | 54.88d | 2.12d | start no earlier than 2013-10-26 | Бояна Димова [8.3%]; Венцислав Маринов [8.3%]; Искрен Папазов [8.3%] | 4h | 1,200 |
| 40 | 2.5.10 | Разработване на прототипи на системата |  | 4d | 2013-10-21 | 2013-10-25 |  | 4.88d | 0d |  | Антоний Кунчев [2.3%]; Виктор Костадинов [2.3%]; Иво Русев [2.3%]; Станислав Стефанов [2.3%] | 3h | 918.75 |
| 41 | 2.5.11 | Разработване на модела на потребителските случай |  | 2d | 2013-11-01 | 2013-11-02 | 39 | 52.88d |  | start no earlier than 2013-10-23 | Бояна Димова [0.7%]; Искрен Папазов [0.7%]; Антоний Кунчев [11.1%] | 2h | 605.56 |
| 42 | 2.5.12 | Ревизия на модела на данните |  | 2d | 2013-10-26 | 2013-10-27 | 40 | 5d |  |  | Антоний Кунчев [6.2%]; Виктор Костадинов [6.2%] | 2h | 575 |
| 43 | 2.5.13 | Ревизия на модела на инфраструктурата |  | 2d | 2013-10-26 | 2013-10-27 | 40 | 5d |  |  | Венцислав Маринов [6.2%]; Станислав Стефанов [6.2%] | 2h | 525 |
| 44 | 2.5.14 | Допълване на речника |  | 7d | 2013-10-21 | 2013-10-28 |  | 4d |  |  | Антоний Кунчев [0.1%]; Бояна Димова [0.1%]; Виктор Костадинов [0.1%]; Венцислав Маринов [0.1%]; Искрен Папазов [0.1%]; Иво Русев [0.1%]; Станислав Стефанов [0.1%] | 0.33h | 101.19 |
| 45 | 2.6 | Предаване на итерация | milestone | 0.17d | 2013-11-02 | 2013-11-02 |  | 54.83d |  | finish no earlier than 2013-11-02 | Антоний Кунчев [37.5%]; Бояна Димова [37.5%]; Виктор Костадинов [37.5%]; Венцислав Маринов [37.5%]; Искрен Папазов [37.5%]; Иво Русев [37.5%]; Станислав Стефанов [37.5%]; Иван Станев [36%] | 4h | 1,067.81 |
| 46 | 2.7 | Е2 Оценка и отразяване на корекции | manual | 0.12d | 2013-11-03 | 2013-11-03 | 44 |  |  | start no earlier than 2013-11-03 | Антоний Кунчев [12.5%]; Бояна Димова [12.5%]; Виктор Костадинов [12.5%]; Венцислав Маринов [12.5%]; Искрен Папазов [12.5%]; Иво Русев [12.5%]; Станислав Стефанов [12.5%]; Иван Станев [12.5%] | 1h | 265.62 |
| 47 | 2.8 | Е2 Приемане на итерация | manual | 1d | 2013-11-03 | 2013-11-03 | 44 |  |  | start no earlier than 2013-11-03 | Антоний Кунчев [1.6%]; Бояна Димова [1.6%]; Виктор Костадинов [1.6%]; Венцислав Маринов [1.6%]; Искрен Папазов [1.6%]; Иво Русев [1.6%]; Станислав Стефанов [1.6%]; Иван Станев [1.6%] | 1h | 265.62 |
| 48 | 3 | **Фаза Изграждане** |  | 36.12d | 2013-11-04 | 2013-12-22 |  |  |  |  |  | 146.5h | 41,282.05 |
| 49 | 3.1 | **C1 Изграждане основни функционалности на системата** |  | 15.88d | 2013-11-04 | 2013-11-24 |  |  |  |  |  | 60.5h | 17,900.3 |
| 50 | 3.1.1 | **Работа по документация** |  | 15.88d | 2013-11-04 | 2013-11-23 |  |  |  |  |  | 31.5h | 9,515.3 |
| 51 | 3.1.1.1 | Ревизия на главния план на проекта |  | 1d | 2013-11-04 | 2013-11-04 |  | 50.88d | 0.12d | start no earlier than 2013-11-04 | Антоний Кунчев [12.5%]; Иво Русев [12.5%] | 2h | 675 |
| 52 | 3.1.1.2 | Ревизия на списъка с рискове |  | 2d | 2013-11-05 | 2013-11-06 | 51 | 50.88d |  | start no earlier than 2013-11-05 | Иво Русев [3.1%] | 0.5h | 187.5 |
| 53 | 3.1.1.3 | Ревизия на плана за управление на качеството |  | 1d | 2013-11-04 | 2013-11-04 |  | 9d | 0.12d |  | Антоний Кунчев [12.5%]; Искрен Папазов [12.5%] | 2h | 625 |
| 54 | 3.1.1.4 | Допълване на речника |  | 6d | 2013-11-04 | 2013-11-10 |  | 49.88d |  | start no earlier than 2013-11-04 | Антоний Кунчев [0.1%]; Бояна Димова [0.1%]; Виктор Костадинов [0.1%]; Венцислав Маринов [0.1%]; Искрен Папазов [0.1%]; Иво Русев [0.1%]; Станислав Стефанов [0.1%] | 0.5h | 151.79 |
| 55 | 3.1.1.5 | Ревизия на модела на потребителските случай |  | 2d | 2013-11-05 | 2013-11-06 | 53 | 8d | 1.12d |  | Антоний Кунчев [3.1%]; Бояна Димова [3.1%]; Искрен Папазов [3.1%] | 1.5h | 475 |
| 56 | 3.1.1.6 | Завършване на спецификацията на изискванията |  | 1d | 2013-11-08 | 2013-11-08 | 55 | 6.88d | 0d |  | Антоний Кунчев [25%] | 2h | 600 |
| 57 | 3.1.1.7 | Ревизия на модела на данните |  | 2d | 2013-11-09 | 2013-11-10 | 56 | 7d | 0.12d | start no earlier than 2013-11-09 | Антоний Кунчев [6.2%]; Виктор Костадинов [6.2%] | 2h | 575 |
| 58 | 3.1.1.8 | Ревизия на модела на инфраструктурата |  | 1d | 2013-11-04 | 2013-11-04 |  | 4.88d | 0.12d |  | Станислав Стефанов [2.8%]; Венцислав Маринов [22.2%] | 2h | 505.56 |
| 59 | 3.1.1.9 | Ревизия на дизайн модела |  | 1d | 2013-11-11 | 2013-11-11 | 57 | 8.75d | 0.12d |  | Антоний Кунчев [12.5%]; Виктор Костадинов [12.5%]; Иво Русев [12.5%] | 3h | 950 |
| 60 | 3.1.1.10 | Ревизия на софтуерната архитектура |  | 1d | 2013-11-12 | 2013-11-12 | 59 | 8d |  |  | Виктор Костадинов [12.5%]; Иво Русев [12.5%] | 2h | 650 |
| 61 | 3.1.1.11 | Ревизия на модела на имплементацията |  | 1d | 2013-11-05 | 2013-11-05 | 58 | 13d |  |  | Искрен Папазов [12.5%]; Станислав Стефанов [12.5%] | 2h | 600 |
| 62 | 3.1.1.12 | Ревизия на прототипите на системата |  | 2d | 2013-11-18 | 2013-11-19 | 59 | 41.88d |  | start no earlier than 2013-11-18 | Антоний Кунчев [2.3%]; Виктор Костадинов [2.3%]; Иво Русев [2.3%]; Станислав Стефанов [18.2%] | 4h | 1,145.45 |
| 63 | 3.1.1.13 | Ревизия на плана за тестване |  | 3d | 2013-11-05 | 2013-11-08 | 58 | 4.88d | 0d |  | Бояна Димова [4.2%]; Венцислав Маринов [4.2%] | 2h | 575 |
| 64 | 3.1.1.14 | Ревизия на тестовите модели |  | 4d | 2013-11-09 | 2013-11-12 | 63 | 5d | 0d |  | Бояна Димова [3.1%]; Венцислав Маринов [3.1%]; Искрен Папазов [3.1%] | 3h | 900 |
| 65 | 3.1.1.15 | Ревизия на резултатите от тестовете |  | 4d | 2013-11-13 | 2013-11-17 | 64 | 5d |  |  | Бояна Димова [3.1%]; Венцислав Маринов [3.1%]; Искрен Папазов [3.1%] | 3h | 900 |

| ID | WBS | Task | Type | Duration | Start | Finish | Predecessors | Total slack | Free slack | Constraint | Resources | Work | Cost |
| --- | --- | --- | --- | --- | --- | --- | --- | --- | --- | --- | --- | --- | --- |
| 66 | 3.1.2 | **Работа по кодиране на функционалностите на системата и тестване** |  | 15.88d | 2013-11-04 | 2013-11-23 |  |  |  |  |  | 29h | 8,385 |
| 67 | 3.1.2.1 | Създаване и конфигуриране на среда за разработка |  | 2d | 2013-11-04 | 2013-11-05 |  | 6.88d | 0d | start no earlier than 2013-11-04 | Антоний Кунчев [3.8%]; Виктор Костадинов [3.8%]; Венцислав Маринов [3.8%]; Иво Русев [3.8%]; Станислав Стефанов [3.8%] | 3h | 885 |
| 68 | 3.1.2.2 | Изграждане структурата и връзките между отделните проекти |  | 1d | 2013-11-06 | 2013-11-06 | 67 | 7d | 1.12d |  | Антоний Кунчев [12.5%]; Виктор Костадинов [12.5%]; Иво Русев [12.5%] | 3h | 950 |
| 69 | 3.1.2.3 | Изграждане на базата данни |  | 3d | 2013-11-08 | 2013-11-10 | 68 | 5.88d | 0.12d |  | Антоний Кунчев [4.2%]; Виктор Костадинов [4.2%] | 2h | 575 |
| 70 | 3.1.2.4 | Изграждане на модул "Регистрация" |  | 2d | 2013-11-11 | 2013-11-12 | 69 | 6.88d | 0d |  | Антоний Кунчев [18.8%] | 3h | 900 |
| 71 | 3.1.2.5 | Изграждане на модул "Архивиране" |  | 3d | 2013-11-13 | 2013-11-16 |  | 44d |  | start no earlier than 2013-11-13 | Станислав Стефанов [12.5%] | 3h | 825 |
| 72 | 3.1.2.6 | Изграждане на модул "Управление на профили" |  | 2d | 2013-11-13 | 2013-11-15 | 70 | 5d |  |  | Виктор Костадинов [25%] | 4h | 1,100 |
| 73 | 3.1.2.7 | Изграждане на модул "Помощ и въпроси" |  | 1d | 2013-11-21 | 2013-11-22 | 69 | 40d |  | finish no earlier than 2013-11-22 | Венцислав Маринов [37.5%] | 3h | 750 |
| 74 | 3.1.2.8 | Стартиране на работа по модул "Управление на документи" |  | 5d | 2013-11-17 | 2013-11-21 |  | 40d |  | start no earlier than 2013-11-17 | Антоний Кунчев [2.5%]; Виктор Костадинов [2.5%]; Венцислав Маринов [2.5%]; Станислав Стефанов [2.5%] | 4h | 1,100 |
| 75 | 3.1.2.9 | Първично тестване на системата и готовите функционалности |  | 13d | 2013-11-06 | 2013-11-20 |  | 38d |  | start no earlier than 2013-11-06 | Бояна Димова [1.9%]; Искрен Папазов [1.9%] | 4h | 1,300 |
| 76 | 3.2 | Предаване на итерация | manual | 1d | 2013-11-22 | 2013-11-22 |  |  |  | finish no earlier than 2013-11-23 | Антоний Кунчев [50%]; Бояна Димова [50%]; Виктор Костадинов [50%]; Венцислав Маринов [50%]; Искрен Папазов [50%]; Иво Русев [50%]; Станислав Стефанов [50%]; Ивайло Каменаров [32%] | 4h | 1,112.57 |
| 77 | 3.3 | C1 Отразяване на корекции | manual | 0.88d | 2013-11-24 | 2013-11-24 | 76 |  |  | start no earlier than 2013-11-24 | Антоний Кунчев [28.6%]; Бояна Димова [28.6%]; Виктор Костадинов [28.6%]; Венцислав Маринов [28.6%]; Искрен Папазов [28.6%]; Иво Русев [28.6%]; Станислав Стефанов [28.6%]; Ивайло Каменаров [28.6%] | 1h | 265.62 |
| 78 | 3.4 | C1 Приемане на итерация | manual | 0.88d | 2013-11-24 | 2013-11-24 | 76 |  |  | start no earlier than 2013-11-24 | Антоний Кунчев [14.3%]; Бояна Димова [14.3%]; Виктор Костадинов [14.3%]; Венцислав Маринов [14.3%]; Искрен Папазов [14.3%]; Иво Русев [14.3%]; Станислав Стефанов [14.3%]; Ивайло Каменаров [14.3%] | 1h | 265.62 |
| 79 | 3.5 | **C2 Изграждане допълнителни и завършване на основни функционалности на системата** |  | 21.12d | 2013-11-25 | 2013-12-22 |  |  |  |  |  | 73h | 19,843.81 |
| 80 | 3.5.1 | **Работа по документация** |  | 15.88d | 2013-11-04 | 2013-11-23 |  |  |  |  |  | 38.5h | 11,120.78 |
| 81 | 3.5.1.1 | Ревизия на главния план на проекта |  | 2d | 2013-11-04 | 2013-11-05 |  | 6.88d | 0d | start no earlier than 2013-11-04 | Антоний Кунчев [6.2%]; Иво Русев [6.2%] | 2h | 675 |
| 82 | 3.5.1.2 | Ревизия на списъка с рискове |  | 2d | 2013-11-06 | 2013-11-08 | 81 | 50d |  | start no earlier than 2013-11-05 | Иво Русев [3.1%] | 0.5h | 187.5 |
| 83 | 3.5.1.3 | Ревизия на плана за управление на качеството |  | 2d | 2013-11-06 | 2013-11-08 | 81 | 5d | 0d | start no earlier than 2013-11-05 | Антоний Кунчев [3.1%]; Искрен Папазов [3.1%] | 1h | 312.5 |
| 84 | 3.5.1.4 | Допълване на речника |  | 14d | 2013-11-04 | 2013-11-19 |  | 39.88d |  | start no earlier than 2013-11-04 | Антоний Кунчев [0.1%]; Бояна Димова [0.1%]; Виктор Костадинов [0.1%]; Венцислав Маринов [0.1%]; Искрен Папазов [0.1%]; Иво Русев [0.1%]; Станислав Стефанов [0.1%] | 0.5h | 151.79 |
| 85 | 3.5.1.5 | Ревизия на модела на потребителските случай |  | 1d | 2013-11-09 | 2013-11-09 | 83 | 5d | 0d |  | Антоний Кунчев [6.2%]; Бояна Димова [6.2%]; Искрен Папазов [6.2%] | 1.5h | 475 |
| 86 | 3.5.1.6 | Ревизия на модела на данните |  | 1d | 2013-11-10 | 2013-11-10 | 85 | 45d | 0.12d | start no earlier than 2013-11-06 | Антоний Кунчев [6.2%]; Виктор Костадинов [6.2%] | 1h | 287.5 |
| 87 | 3.5.1.7 | Ревизия на модела на инфраструктурата |  | 1d | 2013-11-08 | 2013-11-08 |  | 47.88d | 0.12d | start no earlier than 2013-11-07 | Станислав Стефанов [2.2%]; Венцислав Маринов [35.3%] | 3h | 754.41 |
| 88 | 3.5.1.8 | Ревизия на дизайн модела |  | 1d | 2013-11-11 | 2013-11-11 | 86 | 44.88d | 0.12d | start no earlier than 2013-11-09 | Антоний Кунчев [8.3%]; Виктор Костадинов [8.3%]; Иво Русев [8.3%] | 2h | 633.33 |
| 89 | 3.5.1.9 | Ревизия на софтуерната архитектура |  | 1d | 2013-11-12 | 2013-11-12 | 88 | 44.88d | 0d | start no earlier than 2013-11-10 | Виктор Костадинов [6.2%]; Иво Русев [6.2%] | 1h | 325 |
| 90 | 3.5.1.10 | Ревизия на модела на имплементацията |  | 1d | 2013-11-11 | 2013-11-11 | 87 | 48.75d |  | start no earlier than 2013-11-11 | Искрен Папазов [12.5%]; Станислав Стефанов [12.5%] | 2h | 600 |
| 91 | 3.5.1.11 | Ревизия на прототипите на системата |  | 2d | 2013-11-13 | 2013-11-15 | 89 | 45d |  | start no earlier than 2013-11-06 | Антоний Кунчев [4.7%]; Виктор Костадинов [4.7%]; Иво Русев [4.7%]; Станислав Стефанов [4.7%] | 3h | 918.75 |
| 92 | 3.5.1.12 | Ревизия на плана за тестване |  | 3d | 2013-11-11 | 2013-11-13 | 85 | 5.88d | 1.12d | start no earlier than 2013-11-11 | Бояна Димова [8.3%] | 2h | 650 |
| 93 | 3.5.1.13 | Ревизия на тестовите модели |  | 2d | 2013-11-15 | 2013-11-16 | 92 | 4.75d |  |  | Бояна Димова [8.3%]; Венцислав Маринов [8.3%]; Искрен Папазов [8.3%] | 4h | 1,200 |
| 94 | 3.5.1.14 | Ревизия на резултатите от тестовете |  | 2d | 2013-11-15 | 2013-11-16 | 92 | 4.75d |  |  | Бояна Димова [8.3%]; Венцислав Маринов [8.3%]; Искрен Папазов [8.3%] | 4h | 1,200 |
| 95 | 3.5.1.15 | Разработване на план за внедряване и обучение |  | 2d | 2013-11-18 | 2013-11-19 |  | 0.88d | 0d | start no earlier than 2013-11-18 | Венцислав Маринов [18.8%] | 3h | 750 |
| 96 | 3.5.1.16 | Разработване на материали за инсталиране, администриране, поддръжка |  | 2d | 2013-11-20 | 2013-11-21 | 95 | 0.88d | 0.12d |  | Венцислав Маринов [25%] | 4h | 1,000 |
| 97 | 3.5.1.17 | Разработване на материали за обучение |  | 1d | 2013-11-22 | 2013-11-22 | 96 | 0d |  |  | Венцислав Маринов [50%] | 4h | 1,000 |

| ID | WBS | Task | Type | Duration | Start | Finish | Predecessors | Total slack | Free slack | Constraint | Resources | Work | Cost |
| --- | --- | --- | --- | --- | --- | --- | --- | --- | --- | --- | --- | --- | --- |
| 98 | 3.5.2 | **Работа по кодиране на функционалностите на системата и тестване** |  | 20.88d | 2013-11-25 | 2013-12-22 |  |  |  |  |  | 34.5h | 8,723.03 |
| 99 | 3.5.2.1 | Доизграждане на модул "Управление на документи" |  | 5d | 2013-11-25 | 2013-12-01 |  | 4.88d | 0.12d |  | Антоний Кунчев [4.7%]; Виктор Костадинов [4.7%]; Венцислав Маринов [4.7%]; Станислав Стефанов [4.7%] | 7.5h | 2,062.5 |
| 100 | 3.5.2.2 | Изграждане на модул "Интеграция" |  | 3d | 2013-12-02 | 2013-12-06 | 99 | 10d |  |  | Виктор Костадинов [16.7%] | 4h | 1,100 |
| 101 | 3.5.2.3 | Изграждане на модул "Справки" |  | 4d | 2013-12-08 | 2013-12-13 | 103 | 2.88d | 0d |  | Антоний Кунчев [3.1%]; Венцислав Маринов [3.1%]; Станислав Стефанов [3.1%] | 3h | 825 |
| 102 | 3.5.2.4 | Изграждане на модул "Управление на задачи" |  | 4d | 2013-12-14 | 2013-12-17 | 101 | 2.88d |  |  | Антоний Кунчев [7.8%]; Виктор Костадинов [7.8%] | 5h | 1,437.5 |
| 103 | 3.5.2.5 | Функционалности реализирани, чрез уеб сървиси |  | 4d | 2013-12-02 | 2013-12-07 | 99 | 4.88d | 0d | start no earlier than 2013-11-30 | Венцислав Маринов [6.2%]; Станислав Стефанов [6.2%] | 4h | 1,050 |
| 104 | 3.5.2.6 | Тестване на системата и готовите функционалности |  | 4d | 2013-12-13 | 2013-12-16 | 103 | 20.88d | 2d | start no earlier than 2013-12-13 | Бояна Димова [4.2%]; Венцислав Маринов [4.2%]; Искрен Папазов [4.2%] | 4h | 1,200 |
| 105 | 3.5.2.7 | Бета тестване на системата | manual | 2.25d | 2013-12-19 | 2013-12-21 | 104 |  |  | start no earlier than 2013-12-19 | Бояна Димова [12.5%]; Ивайло Каменаров [8%]; Искрен Папазов [8%]; Иван Станев [8%]; Мирослав Червенски [8%] | 7h | 1,048.03 |
| 106 | 3.6 | Предаване на итерация | manual | 0.88d | 2013-12-21 | 2013-12-21 |  |  |  | start no earlier than 2013-12-21 | Антоний Кунчев [7.4%]; Бояна Димова [7.4%]; Виктор Костадинов [7.4%]; Венцислав Маринов [7.4%]; Искрен Папазов [7.4%]; Иво Русев [7.4%]; Станислав Стефанов [7.4%]; Ивайло Каменаров [5.5%] | 4h | 1,097.25 |
| 107 | 3.7 | C2 Отразяване на корекции | manual | 1d | 2013-12-22 | 2013-12-22 | 106 |  |  | start no earlier than 2013-12-22 | Антоний Кунчев [3.1%]; Бояна Димова [3.1%]; Виктор Костадинов [3.1%]; Венцислав Маринов [3.1%]; Искрен Папазов [3.1%]; Иво Русев [3.1%]; Станислав Стефанов [3.1%]; Ивайло Каменаров [3.1%] | 2h | 531.25 |
| 108 | 3.8 | C2 Приемане на итерация | manual | 1d | 2013-12-22 | 2013-12-22 | 106 |  |  | start no earlier than 2013-12-22 | Антоний Кунчев [1.6%]; Бояна Димова [1.6%]; Виктор Костадинов [1.6%]; Венцислав Маринов [1.6%]; Искрен Папазов [1.6%]; Иво Русев [1.6%]; Станислав Стефанов [1.6%]; Ивайло Каменаров [1.6%] | 1h | 265.62 |
| 109 | 4 | **Фаза Предаване** |  | 19d | 2013-12-24 | 2014-01-17 |  |  |  |  |  | 20h | 5,216.09 |
| 110 | 4.1 | **Т1 Предаване** |  | 19d | 2013-12-24 | 2014-01-17 |  |  |  |  |  | 15h | 3,871.43 |
| 111 | 4.1.1 | Завършване на всички документи по проекта |  | 13d | 2013-12-24 | 2014-01-12 |  | 4d |  |  | Антоний Кунчев [0.3%]; Бояна Димова [0.3%]; Виктор Костадинов [0.3%]; Венцислав Маринов [0.3%]; Искрен Папазов [0.3%]; Иво Русев [0.3%]; Станислав Стефанов [0.3%] | 2h | 607.14 |
| 112 | 4.1.2 | Мигриране на данни |  | 5d | 2013-12-24 | 2013-12-30 |  | 0.88d |  |  | Антоний Кунчев [1.2%]; Виктор Костадинов [1.2%]; Венцислав Маринов [1.2%]; Станислав Стефанов [1.2%] | 2h | 550 |
| 113 | 4.1.3 | Функционални и интегрални тестове |  | 5d | 2014-01-03 | 2014-01-07 | 112 | 0.88d |  |  | Бояна Димова [4.2%]; Венцислав Маринов [4.2%]; Искрен Папазов [4.2%] | 5h | 1,500 |
| 114 | 4.1.4 | Провеждане на тестове по приемане на системата |  | 4d | 2014-01-10 | 2014-01-13 | 113 | 0.88d | 0.12d |  | Ивайло Каменаров [2.1%]; Иван Станев [2.1%]; Мирослав Червенски [2.1%] | 2h |  |
| 115 | 4.1.5 | Пускане в експлоатация |  | 2d | 2014-01-14 | 2014-01-16 | 114 | 0.88d |  |  | Антоний Кунчев [3.6%]; Бояна Димова [3.6%]; Виктор Костадинов [3.6%]; Венцислав Маринов [3.6%]; Искрен Папазов [3.6%]; Иво Русев [3.6%]; Станислав Стефанов [3.6%] | 4h | 1,214.29 |
| 116 | 4.2 | Предаване на итерация |  | 0.88d | 2014-01-17 | 2014-01-17 |  | 0d |  | finish no earlier than 2014-01-17 | Антоний Кунчев [7.4%]; Бояна Димова [7.4%]; Виктор Костадинов [7.4%]; Венцислав Маринов [7.4%]; Искрен Папазов [7.4%]; Иво Русев [7.4%]; Иван Станев [6.5%]; Станислав Стефанов [6.5%] | 4h | 1,079.03 |
| 117 | 4.3 | Т1 Приемане на итерация |  | 1d | 2014-01-16 | 2014-01-17 |  | 0d |  | finish no earlier than 2014-01-17 | Антоний Кунчев [62.5%]; Бояна Димова [62.5%]; Виктор Костадинов [62.5%]; Венцислав Маринов [62.5%]; Искрен Папазов [62.5%]; Иво Русев [62.5%]; Иван Станев [1.6%]; Станислав Стефанов [1.6%] | 1h | 265.62 |
