# BBay

Schedule from MS Project, 2014-05-18 to 2014-06-22, costs in лв..

## Calendars

- Standard: Mon-Fri 08:00-12:00, 13:00-17:00; Sat-Sun off. Exceptions (off unless hours are given): 2014-05-18 08:00-12:00, 13:00-17:00.

## Resources

| Resource | Group | Rate |
| --- | --- | --- |
| Малвина Макариева | PM, BA | 470 |
| Светослав Николов | BA, DataE | 450 |
| Михаил Радков | Dev, SysAdm | 400 |
| Симеон Илиев | Dev, Des | 450 |
| Лиляна Маринова | QA, T | 370 |
| Михаил Великов | QA, T | 370 |
| Росен Мартев | Dev, Soft.Arch | 500 |

## Schedule

| ID | WBS | Task | Duration | Start | Finish | Predecessors | Total slack | Free slack | Resources | Work | Cost |
| --- | --- | --- | --- | --- | --- | --- | --- | --- | --- | --- | --- |
| 1 | 1 | **Проект Bbay** | 26d | 2014-05-18 08:00 | 2014-06-22 09:04 |  | 0d |  |  | 594.94h | 265,687.55 |
| 2 | 1.1 | **Планиране** | 5.5d | 2014-05-18 08:00 | 2014-05-23 12:00 |  | 0d |  |  | 72.04h | 31,434.8 |
| 3 | 1.1.1 | **Итерация 1 - Планиране** | 5.5d | 2014-05-18 08:00 | 2014-05-23 12:00 |  | 0d |  |  | 72.04h | 31,434.8 |
| 4 | 1.1.1.1 | Създаване на документа Визия | 1d | 2014-05-18 08:00 | 2014-05-18 17:00 |  | 0d |  | Малвина Макариева | 8h | 3,760 |
| 5 | 1.1.1.2 | Създаване на Плана за разработка на системата | 1d | 2014-05-18 08:00 | 2014-05-18 17:00 | 4SS | 0d |  | Малвина Макариева | 8h | 3,760 |
| 6 | 1.1.1.3 | Създаване на Списък с рисковете | 0.38d | 2014-05-18 08:00 | 2014-05-18 11:00 | 5SS | 0d |  | Малвина Макариева | 3h | 1,410 |
| 7 | 1.1.1.4 | Създаване на План за управление на качеството | 1.5d | 2014-05-18 08:00 | 2014-05-20 11:00 | 5SS | 23.62d | 0d | Лиляна Маринова | 12h | 4,440 |
| 8 | 1.1.1.5 | Създаване на Речник | 0.13d | 2014-05-20 11:00 | 2014-05-20 13:02 | 7 | 23.5d |  | Лиляна Маринова | 1.04h | 384.8 |
| 9 | 1.1.1.6 | Създаване на Спецификация на допълнителните изисквания | 1d | 2014-05-18 08:00 | 2014-05-18 17:00 | 5SS | 22.51d | 0d | Светослав Николов; Лиляна Маринова [50%] | 8h | 3,280 |
| 10 | 1.1.1.7 | Създаване на Бизнес модел | 1d | 2014-05-18 17:00 | 2014-05-20 16:00 | 9 | 22.76d | 1.12d | Светослав Николов; Малвина Макариева [50%] | 8h | 3,680 |
| 11 | 1.1.1.8 | Създаване на Модел на потребителските случаи | 1.5d | 2014-05-22 08:00 | 2014-05-23 12:00 | 10 | 20.5d |  | Симеон Илиев [50%]; Лиляна Маринова | 12h | 4,920 |
| 12 | 1.1.1.9 | Конвенции за писане на код | 0.25d | 2014-05-18 08:00 | 2014-05-18 10:00 |  | 25.75d |  | Михаил Радков | 2h | 800 |
| 13 | 1.1.1.10 | Създаване на Инструментариума | 0.25d | 2014-05-18 11:00 | 2014-05-18 13:00 | 6 | 0d |  | Росен Мартев | 2h | 1,000 |
| 14 | 1.1.1.11 | Създаване на Модел на инфрастуктурата | 1d | 2014-05-18 14:00 | 2014-05-20 12:00 | 13 | 0d |  | Росен Мартев | 8h | 4,000 |
| 15 | 1.2 | **Детайлизиране** | 8.5d | 2014-05-20 13:00 | 2014-06-01 17:04 | 14 | 0d |  |  | 151.93h | 66,935.16 |
| 16 | 1.2.1 | **Итерация 1 - Детайлизиране** | 8.5d | 2014-05-20 13:00 | 2014-06-01 17:04 |  | 0d |  |  | 151.93h | 66,935.16 |
| 17 | 1.2.1.1 | Редактиране на Плана за разработка на системата | 0.63d | 2014-05-20 13:00 | 2014-05-22 10:02 |  | 0d |  | Малвина Макариева [80%] | 4.03h | 1,895.04 |
| 18 | 1.2.1.2 | Редактиране на Рисковете | 0.13d | 2014-05-20 13:00 | 2014-05-20 14:02 | 17SS | 23.37d |  | Малвина Макариева | 1.04h | 488.8 |
| 19 | 1.2.1.3 | Редактиране на Спецификация на допълнителните изисквания | 0.76d | 2014-05-20 13:00 | 2014-05-22 11:04 | 17SS | 0d |  | Светослав Николов [50%] | 3.04h | 1,368 |
| 20 | 1.2.1.4 | Редактиране на Бизнес модела | 0.75d | 2014-05-22 11:04 | 2014-05-23 09:04 | 19 | 0d |  | Светослав Николов; Малвина Макариева [50%] | 6h | 2,760 |
| 21 | 1.2.1.5 | Редактиране на Модела на потребителските случаи | 1d | 2014-05-23 09:04 | 2014-05-24 10:04 | 20 | 0d |  | Лиляна Маринова | 8h | 2,960 |
| 22 | 1.2.1.6 | Създаване на Модел на данните | 1d | 2014-05-27 08:04 | 2014-05-29 09:04 | 23 | 0d |  | Светослав Николов | 8h | 3,600 |
| 23 | 1.2.1.7 | Създаване на Софтуерна архитектура | 2d | 2014-05-24 10:04 | 2014-05-27 08:04 | 21 | 0d |  | Росен Мартев | 16h | 8,000 |
| 24 | 1.2.1.8 | Създаване на Дизайн модел | 2d | 2014-05-27 08:04 | 2014-05-30 09:04 | 23 | 15.87d |  | Симеон Илиев | 16h | 7,200 |
| 25 | 1.2.1.9 | Редакция на Инструментариум | 0.5d | 2014-05-27 08:04 | 2014-05-27 13:04 | 23 | 18.49d |  | Росен Мартев | 4h | 2,000 |
| 26 | 1.2.1.10 | Редакция на Модел на инфраструктурата | 1d | 2014-05-27 08:04 | 2014-05-29 09:04 | 23 | 16.86d |  | Росен Мартев | 8h | 4,000 |
| 27 | 1.2.1.11 | Създаване на Първи Прототип | 3.88d | 2014-05-29 09:04 | 2014-06-01 17:04 | 22 | 0d |  | Михаил Радков; Симеон Илиев; Росен Мартев [80%] | 33.9h | 16,292.92 |
| 28 | 1.2.1.12 | Създаване на Главния план за тестване | 1.12d | 2014-05-20 13:00 | 2014-05-22 14:00 |  | 21.38d | 0d | Михаил Великов; Лиляна Маринова [50%] | 8h | 2,960 |
| 29 | 1.2.1.13 | Тестов модел | 0.5d | 2014-05-22 14:00 | 2014-05-23 09:00 | 28 | 20.88d |  | Лиляна Маринова; Михаил Великов | 8h | 2,960 |

Notes:
- 16: +3 дни, иначе като дължина има преразход от 0,39 дни

| ID | WBS | Task | Duration | Start | Finish | Predecessors | Total slack | Free slack | Resources | Work | Cost |
| --- | --- | --- | --- | --- | --- | --- | --- | --- | --- | --- | --- |
| 30 | 1.2.1.14 | **Резултати от тесването** | 1.86d | 2014-05-29 09:04 | 2014-05-31 10:04 | 27SS | 0d |  | Михаил Великов | 27.92h | 10,450.4 |
| 31 | 1.2.1.14.1 | Резултати от Unit Tests | 1d | 2014-05-29 09:04 | 2014-05-30 09:04 |  | 0d |  | Михаил Радков [50%] | 4h | 1,600 |
| 32 | 1.2.1.14.2 | Резултати от другите определени тестове | 1d | 2014-05-30 09:04 | 2014-05-31 10:04 | 31 | 0d |  | Лиляна Маринова [50%]; Михаил Великов | 9h | 3,330 |
| 33 | 1.3 | **Изграждане** | 15d | 2014-05-31 10:04 | 2014-06-21 10:04 | 30 | 0d |  |  | 344.56h | 155,606.39 |
| 34 | 1.3.1 | **Итерация 1 - Изграждане** | 9.13d | 2014-05-31 10:04 | 2014-06-13 09:04 |  | 0d |  |  | 185.15h | 83,440.06 |
| 35 | 1.3.1.1 | Редакция на План за разработка на софтуерния продукт | 0.5d | 2014-05-31 10:04 | 2014-05-31 15:04 |  | 0d |  | Малвина Макариева | 4h | 1,880 |
| 36 | 1.3.1.2 | Редакция на Списъка с рисковете | 0.13d | 2014-05-31 10:04 | 2014-05-31 11:07 | 35SS | 15d |  | Малвина Макариева | 1.04h | 488.8 |
| 37 | 1.3.1.3 | Допълване на Речника | 0.13d | 2014-05-31 10:04 | 2014-05-31 11:07 | 35SS | 15d | 0d | Малвина Макариева | 1.04h | 488.8 |
| 38 | 1.3.1.4 | Редакция на Материалите за aдминистриране | 0.5d | 2014-05-31 10:04 | 2014-05-31 15:04 | 37SS | 15d |  | Михаил Радков | 4h | 1,600 |
| 39 | 1.3.1.5 | Допълване на Спецификация на допълнителните изисквания | 0.5d | 2014-05-31 10:04 | 2014-05-31 15:04 | 35SS | 0d |  | Лиляна Маринова [50%]; Светослав Николов | 4h | 1,640 |
| 40 | 1.3.1.6 | Редакция на Бизнес модела | 0.8d | 2014-05-31 15:04 | 2014-06-01 11:27 | 39 | 14.34d | 0d | Светослав Николов; Малвина Макариева [50%] | 8h | 3,663.78 |
| 41 | 1.3.1.7 | Редакция на Модела на потребителските случаи | 1d | 2014-06-01 11:27 | 2014-06-03 10:27 | 40 | 13.69d |  | Светослав Николов | 8h | 3,600 |
| 42 | 1.3.1.8 | Редактиране на Модела на инфраструктурата | 1d | 2014-05-31 15:04 | 2014-06-01 14:04 | 39 | 0d |  | Росен Мартев | 8h | 4,000 |
| 43 | 1.3.1.9 | Редактиране на Модел на данните | 1d | 2014-06-01 14:04 | 2014-06-05 09:04 | 42 | 11.87d |  | Светослав Николов | 8h | 3,600 |
| 44 | 1.3.1.10 | Редактиране на Дизайн модел | 1.5d | 2014-06-01 14:04 | 2014-06-05 09:04 | 42 | 0d |  | Росен Мартев | 12h | 6,000 |
| 45 | 1.3.1.11 | Редактиране на Софтуерна архитектура | 1d | 2014-06-05 09:04 | 2014-06-06 09:04 | 44 | 0d |  | Росен Мартев | 8h | 4,000 |
| 46 | 1.3.1.12 | Допълване на Главен план за тестване | 0.5d | 2014-06-06 09:04 | 2014-06-06 14:04 | 45 | 2.54d | 0d | Лиляна Маринова [50%]; Михаил Великов | 4.41h | 1,630.68 |
| 47 | 1.3.1.13 | Редактиране на Тестов модел | 0.5d | 2014-06-06 14:04 | 2014-06-07 10:04 | 46 | 3.67d | 0d | Михаил Великов | 4h | 1,480 |
| 48 | 1.3.1.14 | Изграждане на системата | 5d | 2014-06-06 09:04 | 2014-06-13 09:04 | 45 | 0d |  | Михаил Радков; Симеон Илиев; Росен Мартев | 96h | 43,621.33 |
| 49 | 1.3.1.15 | **Резултати от тесването** | 0.36d | 2014-06-06 14:04 | 2014-06-07 13:44 | 47SS | 3.67d | 0d | Михаил Радков | 14.67h | 5,746.67 |
| 50 | 1.3.1.15.1 | Резултати от Unit Tests | 0.83d | 2014-06-06 14:04 | 2014-06-07 13:44 | 48SS | 3.67d |  | Михаил Радков [60%] | 4h | 1,600 |
| 51 | 1.3.1.15.2 | Резултати от другите определени тестове | 0.25d | 2014-06-06 14:04 | 2014-06-07 08:04 | 48SS | 4.13d |  | Михаил Великов; Лиляна Маринова | 4h | 1,480 |
| 52 | 1.3.2 | **Итерация 2 - Изграждане** | 10d | 2014-06-07 13:44 | 2014-06-21 10:04 | 49 | 0d |  |  | 159.41h | 72,166.34 |
| 53 | 1.3.2.1 | Редакция на План за разработка на софтуерния продукт | 0.5d | 2014-06-07 13:44 | 2014-06-07 17:44 | 49 | 8.76d | 0d | Малвина Макариева | 4h | 1,880 |
| 54 | 1.3.2.2 | Редакция на списъка с рисковете | 0.25d | 2014-06-07 13:44 | 2014-06-07 15:44 | 53SS | 10d |  | Малвина Макариева | 2h | 940 |
| 55 | 1.3.2.3 | Допълване на Речника | 0.25d | 2014-06-07 13:44 | 2014-06-07 15:44 | 53SS | 10d |  | Малвина Макариева | 2h | 940 |
| 56 | 1.3.2.4 | Допълване на Спецификация на допълнителните изисквания | 0.38d | 2014-06-07 13:44 | 2014-06-07 16:44 | 53SS | 8.76d | 0d | Светослав Николов; Лиляна Маринова | 6h | 2,460 |
| 57 | 1.3.2.5 | Редактиране на Софтуерна архитектура | 1d | 2014-06-07 16:44 | 2014-06-08 15:44 | 56 | 9.13d | 0d | Росен Мартев | 8h | 4,000 |
| 58 | 1.3.2.6 | Редакция на Бизнес модела | 0.4d | 2014-06-07 16:44 | 2014-06-08 09:56 | 56 | 9.73d | 0d | Светослав Николов; Малвина Макариева [50%] | 4.01h | 1,836.34 |
| 59 | 1.3.2.7 | Редакция на Модел на потребителските случаи | 0.5d | 2014-06-08 09:56 | 2014-06-08 14:56 | 58 | 10d | 0d | Светослав Николов; Лиляна Маринова [50%] | 5h | 2,090 |
| 60 | 1.3.2.8 | Редактиране на Модела на инфраструктурата | 0.5d | 2014-06-08 15:44 | 2014-06-10 09:44 | 57 | 8.78d |  | Росен Мартев | 4h | 2,000 |
| 61 | 1.3.2.9 | Редактиране на Дизайн модел | 1d | 2014-06-08 15:44 | 2014-06-10 14:44 | 57 | 8.28d |  | Симеон Илиев | 8h | 3,600 |
| 62 | 1.3.2.10 | Редактиране на Модел на данните | 0.75d | 2014-06-08 15:44 | 2014-06-10 11:44 | 57 | 8.53d |  | Лиляна Маринова | 6h | 2,220 |
| 63 | 1.3.2.11 | Допълване на Инструментите | 0.5d | 2014-06-07 13:44 | 2014-06-07 17:44 |  | 10d |  | Росен Мартев | 4h | 2,000 |
| 64 | 1.3.2.12 | Разработка на системата | 5d | 2014-06-13 09:04 | 2014-06-20 09:04 | 48 | 0d |  | Михаил Радков; Симеон Илиев; Росен Мартев | 82.4h | 38,960 |
| 65 | 1.3.2.13 | Допълване на Главен план за тестване | 0.5d | 2014-06-07 16:44 | 2014-06-08 10:44 | 56 | 10d |  | Михаил Великов | 4h | 1,480 |
| 66 | 1.3.2.14 | Редактиране на Тестов модел | 0.5d | 2014-06-08 14:56 | 2014-06-10 08:56 | 59 | 8.88d |  | Михаил Великов | 4h | 1,480 |
| 67 | 1.3.2.15 | Създаване материалите за aдминистриране | 0.25d | 2014-06-13 09:04 | 2014-06-13 11:04 | 64SS | 5.62d |  | Михаил Радков | 2h | 800 |

| ID | WBS | Task | Duration | Start | Finish | Predecessors | Total slack | Resources | Work | Cost |
| --- | --- | --- | --- | --- | --- | --- | --- | --- | --- | --- |
| 68 | 1.3.2.16 | **Резултати от тесването** | 0.86d | 2014-06-20 09:04 | 2014-06-21 10:04 | 64 | 0d | Михаил Радков | 14h | 5,480 |
| 69 | 1.3.2.16.1 | Резултати от Unit Tests | 0.5d | 2014-06-20 09:04 | 2014-06-20 14:04 | 64 | 0d | Михаил Радков [50%] | 2h | 800 |
| 70 | 1.3.2.16.2 | Резултати от другите определени тестове | 0.5d | 2014-06-20 14:04 | 2014-06-21 10:04 | 69 | 0d | Михаил Великов | 4h | 1,480 |
| 71 | 1.4 | **Предаване** | 0d | 2014-06-21 10:04 | 2014-06-22 09:04 | 68 | 0d |  | 26.4h | 11,711.2 |
| 72 | 1.4.1 | **Итерация 1 - предаване** | 0d | 2014-06-21 10:04 | 2014-06-22 09:04 | 68 | 0d |  | 26.4h | 11,711.2 |
| 73 | 1.4.1.1 | Финализиране на Плана за разработка на софтуерния продукт | 0.12d | 2014-06-21 10:04 | 2014-06-21 11:04 | 68 | 0d | Малвина Макариева | 1h | 470 |
| 74 | 1.4.1.2 | Финализиране на Спецификация на допълнителните изисквания | 0.13d | 2014-06-21 10:04 | 2014-06-21 11:07 | 73SS | 0d | Светослав Николов | 1.04h | 468 |
| 75 | 1.4.1.3 | Финализиране на Бизнес модела | 0.12d | 2014-06-21 10:04 | 2014-06-21 11:04 | 73SS | 0d | Светослав Николов | 1h | 450 |
| 76 | 1.4.1.4 | Финализиране на Модел на потребителските случаи | 0.5d | 2014-06-21 11:04 | 2014-06-21 16:04 | 75 | 0d | Светослав Николов | 4h | 1,800 |
| 77 | 1.4.1.5 | Финализиране на Модел на инфраструктурата | 0.12d | 2014-06-21 11:07 | 2014-06-21 13:07 | 74 | 0d | Росен Мартев | 1h | 500 |
| 78 | 1.4.1.6 | Финализиране на Софтуерна архитектура | 0.25d | 2014-06-21 13:07 | 2014-06-21 15:07 | 77 | 0d | Росен Мартев | 2h | 1,000 |
| 79 | 1.4.1.7 | Финализиране на Дизайн модел | 0.25d | 2014-06-21 15:07 | 2014-06-21 17:07 | 78 | 0d | Росен Мартев | 2h | 1,000 |
| 80 | 1.4.1.8 | Финализиране на Модел на данните | 0.25d | 2014-06-21 15:07 | 2014-06-21 17:07 | 78 | 0d | Светослав Николов | 2h | 900 |
| 81 | 1.4.1.9 | Финализиране на Инструментите, които са използвани | 0.12d | 2014-06-21 10:04 | 2014-06-21 11:04 | 68 | 0d | Росен Мартев | 1h | 500 |
| 82 | 1.4.1.10 | Финализиране на Главния план за тесване | 0.12d | 2014-06-21 10:04 | 2014-06-21 11:04 | 64 | 0d | Михаил Великов | 1h | 370 |
| 83 | 1.4.1.11 | Финализиране на Тестовия модел | 0.17d | 2014-06-21 11:04 | 2014-06-21 13:26 | 82 | 0d | Михаил Великов | 1.36h | 503.2 |
| 84 | 1.4.1.12 | Финализиране на Речник | 0.12d | 2014-06-21 10:04 | 2014-06-21 11:04 | 57 | 0d | Малвина Макариева | 1h | 470 |
| 85 | 1.4.1.13 | **Резултати от тесването** | 0d | 2014-06-21 10:04 | 2014-06-22 09:04 | 64 | 0d |  | 8h | 3,280 |
| 86 | 1.4.1.13.1 | Резултати от Unit Tests | 1d | 2014-06-21 10:04 | 2014-06-22 09:04 |  | 0d | Симеон Илиев [50%] | 4h | 1,800 |
| 87 | 1.4.1.13.2 | Резултати от другите определени тестове | 0.5d | 2014-06-21 10:04 | 2014-06-21 15:04 | 86SS | 0d | Михаил Великов | 4h | 1,480 |
